# RFID 기반 마약류 시범사업

Schedule from MS Project, 2013-11-04 to 2014-07-14, status date 2011-04-08, A marks actual dates.
(二�)�븳誘퇙T

## Calendars

- 표준: Mon-Fri 08:00-12:00, 13:00-17:00; Sat-Sun off. Exceptions (off unless hours are given): 2007-10-03 to 2049-10-03 (개천절, recurring), 2007-12-25 to 2049-12-25 (크리스마스, recurring), 2013-03-01 to 2014-03-01 (삼일절, recurring), 2013-08-15 to 2049-08-15 (광복절, recurring), 2013-10-09 to 2049-10-09 (한글날, recurring), 2014-01-01 (신정, recurring), 2014-01-30 08:00-12:00, 13:00-17:00, 2014-01-31 to 2014-02-02 (설날), 2014-05-05 to 2014-05-06 (어린이날).

## Resources

| Resource | Group |
| --- | --- |
| C#_남현수 | 김한상 |
| C#_이창호 | 이재권 |
| DBA_중 |  |
| C#_용세중 | 서종일 |
| SI_WEB_중 | 천기숙 |
| C#_김광태 | 이재권 |
| 천기숙 | 천기숙 |
| 이재권 | 이재권 |
| 공통 |  |
| 박지혜_초 | 김한상 |
| 자사충원_중 | 이재권 |
| 동국제약 |  |
| 디자인_고 |  |
| 김한상 | 김한상 |
| 서종일 | 서종일 |
| PM |  |
| LS산전 |  |
| C#_김정민 | 김한상 |
| C#_김영식 | 이재권 |
| 전재연 |  |
| 용세중 |  |
| 남현수 |  |
| 김영식 |  |
| 용ㅅ제ㅜㅇ |  |
| 이창호 |  |
| 김광태 |  |
| 김정민 |  |
| 372 |  |
| 박지혜 |  |
| 남혀ㅅㄴㅜ |  |
| 한원석 |  |
| 최명호 |  |

## Schedule

| ID | WBS | Task | Type | Duration | Start | Finish | Complete | Remaining | Total slack | Free slack | Constraint | Deadline | 완료 분석 |
| --- | --- | --- | --- | --- | --- | --- | --- | --- | --- | --- | --- | --- | --- |
| 1 | 1 | 프로젝트 착수 | milestone | 0d | 2013-11-04 | 2013-11-04 |  |  | 0d |  |  |  | 예정 |
| 2 | 2 | **관리** |  | 121d | 2013-11-04 A | 2014-04-24 | 46% | 65.15d | -55d | 0d |  | 2012-01-31 | 예정 |
| 3 | 2.1 | **공식보고** |  | 0d | 2013-11-04 A | 2013-11-04 |  | 0d | 0d |  |  |  | 예정 |
| 4 | 2.1.1 | 착수보고 | milestone | 0d | 2013-11-04 A | 2013-11-04 | 50% | 0d | -451d | 0d |  |  | 예정 |
| 5 | 2.1.2 | 완료보고 | milestone | 0d | 2013-11-04 | 2013-11-04 |  |  | -451d | 0d |  |  | 예정 |
| 6 | 2.2 | **주간업무보고** |  | 98d | 2013-12-05 A | 2014-04-24 | 48% | 51.33d | -55d | 0d |  |  | 예정 |
| 7 | 2.2.1 | 주간업무보고 1 |  | 1d | 2013-12-05 A | 2013-12-05 A | 100% |  |  |  | start no earlier than 2013-12-05 |  | 계획대로 |
| 8 | 2.2.2 | 주간업무보고 2 |  | 1d | 2013-12-12 A | 2013-12-12 A | 100% |  |  |  | start no earlier than 2013-12-12 |  | 계획대로 |
| 9 | 2.2.3 | 주간업무보고 3 |  | 1d | 2013-12-19 A | 2013-12-19 A | 100% |  |  |  | start no earlier than 2013-12-19 |  | 계획대로 |
| 10 | 2.2.4 | 주간업무보고 4 |  | 1d | 2013-12-26 A | 2013-12-26 A | 100% |  |  |  | start no earlier than 2013-12-26 |  | 계획대로 |
| 11 | 2.2.5 | 주간업무보고 5 |  | 1d | 2014-01-02 A | 2014-01-02 A | 100% |  |  |  | start no earlier than 2014-01-02 |  | 계획대로 |
| 12 | 2.2.6 | 주간업무보고 6 |  | 1d | 2014-01-09 A | 2014-01-09 A | 100% |  |  |  | start no earlier than 2014-01-09 |  | 계획대로 |
| 13 | 2.2.7 | 주간업무보고 7 |  | 1d | 2014-01-16 A | 2014-01-16 A | 100% |  |  |  | start no earlier than 2014-01-16 |  | 계획대로 |
| 14 | 2.2.8 | 주간업무보고 8 |  | 1d | 2014-01-23 A | 2014-01-23 A | 100% |  |  |  | start no earlier than 2014-01-23 |  | 계획대로 |
| 15 | 2.2.9 | 주간업무보고 9 |  | 1d | 2014-01-30 A | 2014-01-30 A | 100% |  |  |  | start no earlier than 2014-01-30 |  | 계획대로 |
| 16 | 2.2.10 | 주간업무보고 10 |  | 1d | 2014-02-06 A | 2014-02-06 A | 100% |  |  |  | start no earlier than 2014-02-06 |  | 계획대로 |
| 17 | 2.2.11 | 주간업무보고 11 |  | 1d | 2014-02-13 | 2014-02-13 |  |  | -522d | 0d | start no earlier than 2014-02-13 |  | 예정 |
| 18 | 2.2.12 | 주간업무보고 12 |  | 1d | 2014-02-20 | 2014-02-20 |  |  | -527d | 0d | start no earlier than 2014-02-20 |  | 예정 |
| 19 | 2.2.13 | 주간업무보고 13 |  | 1d | 2014-02-27 | 2014-02-27 |  |  | -532d | 0d | start no earlier than 2014-02-27 |  | 예정 |
| 20 | 2.2.14 | 주간업무보고 14 |  | 1d | 2014-03-06 | 2014-03-06 |  |  | -537d | 0d | start no earlier than 2014-03-06 |  | 예정 |
| 21 | 2.2.15 | 주간업무보고 15 |  | 1d | 2014-03-13 | 2014-03-13 |  |  | -542d | 0d | start no earlier than 2014-03-13 |  | 예정 |
| 22 | 2.2.16 | 주간업무보고 16 |  | 1d | 2014-03-20 | 2014-03-20 |  |  | -547d | 0d | start no earlier than 2014-03-20 |  | 예정 |
| 23 | 2.2.17 | 주간업무보고 17 |  | 1d | 2014-03-27 | 2014-03-27 |  |  | -552d | 0d | start no earlier than 2014-03-27 |  | 예정 |
| 24 | 2.2.18 | 주간업무보고 18 |  | 1d | 2014-04-03 | 2014-04-03 |  |  | -557d | 0d | start no earlier than 2014-04-03 |  | 예정 |
| 25 | 2.2.19 | 주간업무보고 19 |  | 1d | 2014-04-10 | 2014-04-10 |  |  | -562d | 0d | start no earlier than 2014-04-10 |  | 예정 |
| 26 | 2.2.20 | 주간업무보고 20 |  | 1d | 2014-04-17 | 2014-04-17 |  |  | -567d | 0d | start no earlier than 2014-04-17 |  | 예정 |
| 27 | 2.2.21 | 주간업무보고 21 |  | 1d | 2014-04-24 | 2014-04-24 |  |  | -572d | 0d | start no earlier than 2014-04-24 |  | 예정 |

| ID | WBS | Task | Type | Duration | Start | Finish | Predecessors | Complete | Remaining | Total slack | Free slack | Constraint | Deadline | Resources | Work | Actual work | 완료 분석 | Text6 |
| --- | --- | --- | --- | --- | --- | --- | --- | --- | --- | --- | --- | --- | --- | --- | --- | --- | --- | --- |
| 28 | 2.3 | **월간업무보고** |  | 84d | 2013-12-26 A | 2014-04-24 |  | 40% | 50.4d | -59d | 0d |  |  |  |  |  | 예정 |  |
| 29 | 2.3.1 | 월간보고 1 |  | 1d | 2013-12-26 A | 2013-12-26 A |  | 100% |  |  |  | start no earlier than 2013-12-26 |  |  |  |  | 계획대로 |  |
| 30 | 2.3.2 | 월간보고 2 |  | 1d | 2014-01-30 A | 2014-01-30 A |  | 100% |  |  |  | start no earlier than 2014-01-30 |  |  |  |  | 계획대로 |  |
| 31 | 2.3.3 | 월간보고 3 |  | 1d | 2014-02-27 | 2014-02-27 |  |  |  | -532d | 0d | start no earlier than 2014-02-27 |  |  |  |  | 예정 |  |
| 32 | 2.3.4 | 월간보고 4 |  | 1d | 2014-03-27 | 2014-03-27 |  |  |  | -552d | 0d | start no earlier than 2014-03-27 |  |  |  |  | 예정 |  |
| 33 | 2.3.5 | 월간보고 5 |  | 1d | 2014-04-24 | 2014-04-24 |  |  |  | -572d | 0d | start no earlier than 2014-04-24 |  |  |  |  | 예정 |  |
| 34 | 2.4 | **산출물** |  | 0d | 2013-11-04 | 2013-11-04 |  |  |  | -451d | 0d |  |  |  |  |  | 예정 |  |
| 35 | 2.4.1 | 분석산출물 | milestone | 0d | 2013-11-04 | 2013-11-04 |  |  |  | -451d | 0d |  |  |  |  |  | 예정 |  |
| 36 | 2.4.2 | 설계산출물 | milestone | 0d | 2013-11-04 | 2013-11-04 |  |  |  | -451d | 0d |  |  |  |  |  | 예정 |  |
| 37 | 2.4.3 | 구현산출물 | milestone | 0d | 2013-11-04 | 2013-11-04 |  |  |  | -451d | 0d |  |  |  |  |  | 예정 |  |
| 38 | 2.4.4 | 전개산출물 | milestone | 0d | 2013-11-04 | 2013-11-04 |  |  |  | -451d | 0d |  |  |  |  |  | 예정 |  |
| 39 | 2.4.5 | 완료산출물 | milestone | 0d | 2013-11-04 | 2013-11-04 |  |  |  | -451d | 0d |  |  |  |  |  | 예정 |  |
| 40 | 3 | **약품포자재** |  | 13d | 2013-12-16 A | 2014-01-03 |  | 96% | 0.5d | 133d |  |  |  |  | 284h | 268h | 예정 |  |
| 41 | 3.1 | **포자재 수량** |  | 10d | 2013-12-16 A | 2013-12-30 |  | 95% | 0.5d | 136d |  |  |  |  | 260h | 244h | 예정 |  |
| 42 | 3.1.1 | 시범사업 제품별 선정 및 수량 확인 |  | 5d | 2013-12-16 A | 2013-12-20 A | 1FS+25d | 100% |  |  |  |  |  | 이재권; 김한상; 서종일; 전재연 | 100h | 100h | 계획대로 | 수량정의산출물 |
| 43 | 3.1.2 | 표준코드 확인 |  | 5d | 2013-12-23 A | 2013-12-30 | 42 | 90% | 0.5d | 136d |  |  |  | 이재권; 김한상; 서종일; 전재연 | 160h | 144h | 예정 |  |
| 44 | 3.2 | **코드체계 분석** |  | 3d | 2013-12-31 A | 2014-01-03 A |  | 100% |  |  |  |  |  |  | 24h | 24h | 계획대로 |  |
| 45 | 3.2.1 | (앰퓰, 카톤, 바틀, 박스)코드체계 분석 |  | 3d | 2013-12-31 A | 2014-01-03 A | 43 | 100% |  |  |  |  |  | 김한상 | 24h | 24h | 계획대로 |  |
| 46 | 4 | **S/W** |  | 176d | 2013-11-04 A | 2014-07-14 |  | 73% | 47.46d | 0d |  |  | 2012-01-31 |  | 4942.4h | 2624.02h | 예정 |  |
| 47 | 4.1 | **공통준비** |  | 41d | 2013-11-04 A | 2013-12-31 A |  | 100% |  |  |  |  |  |  | 256h | 256h | 계획대로 |  |
| 48 | 4.1.1 | 개발환경 구축 및 테스트 서버 준비 |  | 10d | 2013-11-04 A | 2013-11-15 A | 1 | 100% |  |  |  |  |  |  |  |  | 계획대로 |  |
| 49 | 4.1.2 | 개발환경 연동 문서 작성 |  | 1d | 2013-11-18 A | 2013-11-18 A | 48 | 100% |  |  |  |  |  |  |  |  | 계획대로 |  |
| 50 | 4.1.3 | **개발자 교육** |  | 15d | 2013-11-04 A | 2013-11-22 A |  | 100% |  |  |  |  |  |  | 200h | 200h | 계획대로 |  |
| 51 | 4.1.3.1 | EDGE 프로그램 이해(CEA, SCE, INT연동 등) |  | 10d | 2013-11-04 A | 2013-11-15 A | 1 | 100% |  |  |  |  |  | 공통 | 80h | 80h | 계획대로 |  |
| 52 | 4.1.3.2 | PDA 프로그램 이해(CEA, SCE, INT연동 등) |  | 10d | 2013-11-04 A | 2013-11-15 A | 1 | 100% |  |  |  |  |  | 공통 | 80h | 80h | 계획대로 |  |
| 53 | 4.1.3.3 | 매뉴얼 작성 및 관리(분석 내용 정리 & PT) |  | 5d | 2013-11-18 A | 2013-11-22 A | 51, 52 | 100% |  |  |  |  |  | 공통 | 40h | 40h | 계획대로 |  |

Notes:
- 42: 진행사항 확인하기
- 48: 진행사항 확인하기

| ID | WBS | Task | Duration | Start | Finish | Predecessors | Complete | Constraint | Resources | Work | Actual work | 완료 분석 |
| --- | --- | --- | --- | --- | --- | --- | --- | --- | --- | --- | --- | --- |
| 54 | 4.1.4 | **KEIDAS 라이브러리 인수인계** | 27d | 2013-11-22 A | 2013-12-31 A |  | 100% |  |  | 56h | 56h | 계획대로 |
| 55 | 4.1.4.1 | 제약사_포장(READING) Driver 인수인계 | 1d | 2013-11-22 A | 2013-11-22 A |  | 100% | must finish on 2013-11-22 | 박지혜 | 8h | 8h | 계획대로 |
| 56 | 4.1.4.2 | 제약사_수입사_검체 Driver 인수인계 | 1d | 2013-11-22 A | 2013-11-22 A |  | 100% | must finish on 2013-11-22 | 박지혜 | 8h | 8h | 계획대로 |
| 57 | 4.1.4.3 | 제약사_Agg(앰플 매칭) Driver 인수인계 | 1d | 2013-11-29 A | 2013-11-29 A |  | 100% | must finish on 2013-11-29 | 박지혜 | 8h | 8h | 계획대로 |
| 58 | 4.1.4.4 | 제약사_Agg(박스 매칭) Driver 인수인계 | 1d | 2013-11-29 A | 2013-11-29 A |  | 100% | must finish on 2013-11-29 | 박지혜 | 8h | 8h | 계획대로 |
| 59 | 4.1.4.5 | 수입사_입고_박스매칭 Driver 인수인계 | 1d | 2013-12-13 A | 2013-12-13 A |  | 100% | must finish on 2013-12-13 | 박지혜 | 8h | 8h | 계획대로 |
| 60 | 4.1.4.6 | 제약사_수입사_발송 Driver 인수인계 | 1d | 2013-12-13 A | 2013-12-13 A |  | 100% | must finish on 2013-12-13 | 박지혜 | 8h | 8h | 계획대로 |
| 61 | 4.1.4.7 | 제약사_수입사_반품입고/폐기 Driver 인수인계 | 1d | 2013-12-31 A | 2013-12-31 A |  | 100% | must finish on 2013-12-31 | 박지혜 | 8h | 8h | 계획대로 |
| 62 | 4.2 | **분석** | 23.4d | 2013-11-04 A | 2013-12-05 A |  | 100% |  |  | 235.2h | 235.2h | 계획대로 |
| 63 | 4.2.1 | **프로젝트 이해** | 16d | 2013-11-04 A | 2013-11-25 A |  | 100% |  |  | 136h | 136h | 계획대로 |
| 64 | 4.2.1.1 | **AS-IS 및 TO-BE 이해(제조사)** | 16d | 2013-11-04 A | 2013-11-25 A |  | 100% |  |  | 136h | 136h | 계획대로 |
| 65 | 4.2.1.1.1 | 구현 현황 이해 | 2d | 2013-11-04 A | 2013-11-05 A | 1 | 100% |  | 이재권; 김한상 | 16h | 16h | 계획대로 |
| 66 | 4.2.1.1.2 | 업무프로세스 이해 | 1d | 2013-11-06 A | 2013-11-06 A | 65 | 100% |  | 이재권; 김한상 | 16h | 16h | 계획대로 |
| 67 | 4.2.1.1.3 | Legacy DB 및 I/F 이해 | 10d | 2013-11-07 A | 2013-11-20 A | 66 | 100% |  | 천기숙 | 80h | 80h | 계획대로 |
| 68 | 4.2.1.1.4 | 구현 흐름도 작성 및 업무 범위 정의 | 3d | 2013-11-21 A | 2013-11-25 A | 67 | 100% |  | 천기숙 | 24h | 24h | 계획대로 |
| 69 | 4.2.2 | **요구사항정의** | 2d | 2013-11-26 A | 2013-11-27 A |  | 100% |  |  | 32h | 32h | 계획대로 |
| 70 | 4.2.2.1 | 제조사_포장요구사항 | 1d | 2013-11-26 A | 2013-11-26 A | 68 | 100% |  | 이재권; 김한상 | 16h | 16h | 계획대로 |
| 71 | 4.2.2.2 | 제조사_발송요구사항 | 1d | 2013-11-27 A | 2013-11-27 A | 70 | 100% |  | 이재권; 김한상 | 16h | 16h | 계획대로 |
| 72 | 4.2.3 | **업무기능정의** | 2.4d | 2013-11-28 A | 2013-12-02 A |  | 100% |  |  | 43.2h | 43.2h | 계획대로 |
| 73 | 4.2.3.1 | READING EDGE | 0.3d | 2013-11-28 A | 2013-11-28 A | 71 | 100% |  | 용세중; 김광태 | 2.4h | 2.4h | 계획대로 |
| 74 | 4.2.3.2 | 앰퓰매칭 EDGE | 0.6d | 2013-11-28 A | 2013-11-28 A | 73 | 100% |  | 용세중; 김광태 | 7.2h | 7.2h | 계획대로 |
| 75 | 4.2.3.3 | 박스매칭 EDGE | 0.6d | 2013-11-28 A | 2013-11-29 A | 74 | 100% |  | 용세중; 김광태 | 7.2h | 7.2h | 계획대로 |
| 76 | 4.2.3.4 | 발송 EDGE | 0.3d | 2013-11-28 A | 2013-11-29 A | 75 | 100% |  | 남현수; 김광태 | 4.8h | 4.8h | 계획대로 |
| 77 | 4.2.3.5 | 검체 PDA EDGE | 0.6d | 2013-11-29 A | 2013-11-29 A | 76 | 100% |  | 김정민; 김광태 | 7.2h | 7.2h | 계획대로 |
| 78 | 4.2.3.6 | 반품입고/폐기 PDA EDGE | 0.3d | 2013-11-29 A | 2013-11-29 A | 77 | 100% |  | 김정민; 김광태 | 4.8h | 4.8h | 계획대로 |
| 79 | 4.2.3.7 | 포장보조 PDA EDGE | 0.3d | 2013-11-29 A | 2013-12-02 A | 78 | 100% |  | 김정민; 김광태 | 4.8h | 4.8h | 계획대로 |
| 80 | 4.2.3.8 | 발송보조 PDA EDGE | 0.3d | 2013-12-02 A | 2013-12-02 A | 79 | 100% |  | 김정민; 김광태 | 4.8h | 4.8h | 계획대로 |

| ID | WBS | Task | Type | Duration | Start | Finish | Predecessors | Complete | Remaining | Total slack | Free slack | Resources | Work | Actual work | 완료 분석 | Text6 |
| --- | --- | --- | --- | --- | --- | --- | --- | --- | --- | --- | --- | --- | --- | --- | --- | --- |
| 81 | 4.2.4 | **분석 산출물 리뷰 및 수정** |  | 3d | 2013-12-02 A | 2013-12-05 A |  | 100% |  |  |  |  | 24h | 24h | 계획대로 |  |
| 82 | 4.2.4.1 | 분석 산출물 리뷰 |  | 2d | 2013-12-02 A | 2013-12-04 A | 80 | 100% |  |  |  | 공통 | 16h | 16h | 계획대로 |  |
| 83 | 4.2.4.2 | 분석 산출물 최종 수정 |  | 1d | 2013-12-04 A | 2013-12-05 A | 82 | 100% |  |  |  | 공통 | 8h | 8h | 계획대로 |  |
| 84 | 4.2.5 | 분석 완료 | milestone | 0d | 2013-12-05 A | 2013-12-05 A | 83 | 100% |  |  |  |  |  |  | 계획대로 |  |
| 85 | 4.3 | **설계** |  | 30d | 2013-11-26 A | 2014-01-08 |  | 74% | 7.84d | 0d |  |  | 338.4h | 263.2h | 예정 |  |
| 86 | 4.3.1 | **공통 설계** |  | 30d | 2013-11-26 A | 2014-01-08 A |  | 100% |  |  |  |  | 128h | 128h | 계획대로 |  |
| 87 | 4.3.1.1 | **STP** |  | 3d | 2014-01-06 A | 2014-01-08 A |  | 100% |  |  |  |  | 24h | 24h | 계획대로 |  |
| 88 | 4.3.1.1.1 | 앰퓰태그 코드 체계 설계 |  | 1d | 2014-01-06 A | 2014-01-06 A | 45 | 100% |  |  |  | 김한상 | 8h | 8h | 계획대로 | 부착위치정의산출물 |
| 89 | 4.3.1.1.2 | 박스태그(소박스, 완박스) 코드 체계 설계 |  | 1d | 2014-01-07 A | 2014-01-07 A | 88 | 100% |  |  |  | 김한상 | 8h | 8h | 계획대로 |  |
| 90 | 4.3.1.1.3 | 발송 코드 체계 설계 |  | 1d | 2014-01-08 A | 2014-01-08 A | 89 | 100% |  |  |  | 김한상 | 8h | 8h | 계획대로 |  |
| 91 | 4.3.1.2 | **I/F 설계** |  | 5d | 2013-11-26 A | 2013-12-02 A |  | 100% |  |  |  |  | 40h | 40h | 계획대로 |  |
| 92 | 4.3.1.2.1 | 제조사_Legacy I/F 설계 |  | 5d | 2013-11-26 A | 2013-12-02 A | 68 | 100% |  |  |  | 천기숙 | 40h | 40h | 계획대로 |  |
| 93 | 4.3.1.3 | **DB설계** |  | 8d | 2013-12-03 A | 2013-12-12 A |  | 100% |  |  |  |  | 64h | 64h | 계획대로 |  |
| 94 | 4.3.1.3.1 | **제조사** |  | 8d | 2013-12-03 A | 2013-12-12 A |  | 100% |  |  |  |  | 64h | 64h | 계획대로 |  |
| 95 | 4.3.1.3.1.1 | I/F 테이블목록작성 |  | 2d | 2013-12-03 A | 2013-12-04 A | 92 | 100% |  |  |  | 천기숙 | 16h | 16h | 계획대로 |  |
| 96 | 4.3.1.3.1.2 | I/F 테이블정의서작성 |  | 2d | 2013-12-05 A | 2013-12-06 A | 95 | 100% |  |  |  | 천기숙 | 16h | 16h | 계획대로 |  |
| 97 | 4.3.1.3.1.3 | 테이블목록작성 |  | 1d | 2013-12-09 A | 2013-12-09 A | 96 | 100% |  |  |  | 천기숙 | 8h | 8h | 계획대로 |  |
| 98 | 4.3.1.3.1.4 | 테이블정의서작성 |  | 1d | 2013-12-10 A | 2013-12-10 A | 97 | 100% |  |  |  | 천기숙 | 8h | 8h | 계획대로 |  |
| 99 | 4.3.1.3.1.5 | I/F 및 DB 설계 산출물 리뷰 및 수정 |  | 2d | 2013-12-11 A | 2013-12-12 A | 98 | 100% |  |  |  | 천기숙 | 16h | 16h | 계획대로 |  |
| 100 | 4.3.1.4 | 공통 STP, 제조사 I/F 및 DB설계 완료 | milestone | 0d | 2013-12-12 A | 2013-12-12 A | 99 | 100% |  |  |  |  |  |  | 계획대로 |  |
| 101 | 4.3.2 | **포장** |  | 7d | 2013-12-05 A | 2013-12-16 |  | 77% | 1.63d | -0.5d | 0d |  | 114.4h | 87.2h | 예정 |  |
| 102 | 4.3.2.1 | **어플리케이션 구조도** |  | 1.2d | 2013-12-05 A | 2013-12-06 A |  | 100% |  |  |  |  | 18.4h | 18.4h | 계획대로 |  |
| 103 | 4.3.2.1.1 | PDA (검체, 포장보조, 매칭보조) |  | 0.3d | 2013-12-05 A | 2013-12-05 A | 84 | 100% |  |  |  | 김정민; 김광태 | 4.8h | 4.8h | 계획대로 |  |
| 104 | 4.3.2.1.2 | READING EDGE |  | 0.2d | 2013-12-05 A | 2013-12-05 A | 103 | 100% |  |  |  | 용세중; 김광태 | 3.2h | 3.2h | 계획대로 |  |
| 105 | 4.3.2.1.3 | 앰퓰매칭 EDGE |  | 0.6d | 2013-12-05 A | 2013-12-06 A | 104 | 100% |  |  |  | 용세중; 김광태 | 7.2h | 7.2h | 계획대로 |  |
| 106 | 4.3.2.1.4 | 박스매칭 EDGE |  | 0.2d | 2013-12-06 A | 2013-12-06 A | 105 | 100% |  |  |  | 남현수; 김광태 | 3.2h | 3.2h | 계획대로 |  |

| ID | WBS | Task | Type | Duration | Start | Finish | Predecessors | Complete | Remaining | Total slack | Free slack | Resources | Work | Actual work | 완료 분석 |
| --- | --- | --- | --- | --- | --- | --- | --- | --- | --- | --- | --- | --- | --- | --- | --- |
| 107 | 4.3.2.2 | **작업흐름도** |  | 1d | 2013-12-06 A | 2013-12-09 A |  | 100% |  |  |  |  | 16h | 16h | 계획대로 |
| 108 | 4.3.2.2.1 | PDA (검체, 포장보조, 매칭보조) |  | 0.3d | 2013-12-06 A | 2013-12-06 A | 106 | 100% |  |  |  | 김광태; 김정민 | 4.8h | 4.8h | 계획대로 |
| 109 | 4.3.2.2.2 | READING EDGE |  | 0.2d | 2013-12-06 A | 2013-12-06 A | 108 | 100% |  |  |  | 김광태; 용세중 | 3.2h | 3.2h | 계획대로 |
| 110 | 4.3.2.2.3 | 앰퓰매칭 EDGE |  | 0.3d | 2013-12-06 A | 2013-12-09 A | 109 | 100% |  |  |  | 김광태; 용세중 | 4.8h | 4.8h | 계획대로 |
| 111 | 4.3.2.2.4 | 박스매칭 EDGE |  | 0.2d | 2013-12-09 A | 2013-12-09 A | 110 | 100% |  |  |  | 김광태; 남현수 | 3.2h | 3.2h | 계획대로 |
| 112 | 4.3.2.3 | **화면목록** |  | 1d | 2013-12-09 A | 2013-12-10 |  | 50% | 0.5d | -0.5d | 0d |  | 16h | 8h | 예정 |
| 113 | 4.3.2.3.1 | PDA (검체, 포장보조, 매칭보조) |  | 0.3d | 2013-12-09 A | 2013-12-09 A | 111 | 100% |  |  |  | 김광태; 김정민 | 4.8h | 4.8h | 계획대로 |
| 114 | 4.3.2.3.2 | READING EDGE |  | 0.2d | 2013-12-09 A | 2013-12-09 A | 113 | 100% |  |  |  | 김광태; 용세중 | 3.2h | 3.2h | 계획대로 |
| 115 | 4.3.2.3.3 | 앰퓰매칭 EDGE |  | 0.3d | 2013-12-09 | 2013-12-10 | 114 |  |  | -477.4d | 0d | 김광태; 용세중 | 4.8h |  | 예정 |
| 116 | 4.3.2.3.4 | 박스매칭 EDGE |  | 0.2d | 2013-12-10 | 2013-12-10 | 115 |  |  | -477.4d | 0d | 김광태; 남현수 | 3.2h |  | 예정 |
| 117 | 4.3.2.4 | **화면정의** |  | 2d | 2013-12-10 A | 2013-12-12 |  | 90% | 0.2d | 0d |  |  | 32h | 28.8h | 예정 |
| 118 | 4.3.2.4.1 | PDA (검체, 포장보조, 매칭보조) |  | 0.5d | 2013-12-10 A | 2013-12-10 A | 116 | 100% |  |  |  | 김광태; 김정민 | 8h | 8h | 계획대로 |
| 119 | 4.3.2.4.2 | READING EDGE |  | 0.5d | 2013-12-10 A | 2013-12-11 A | 118 | 100% |  |  |  | 김광태; 용세중 | 8h | 8h | 계획대로 |
| 120 | 4.3.2.4.3 | 앰퓰매칭 EDGE |  | 0.5d | 2013-12-11 A | 2013-12-11 A | 119 | 100% |  |  |  | 김광태; 용세중 | 8h | 8h | 계획대로 |
| 121 | 4.3.2.4.4 | 박스매칭 EDGE |  | 0.5d | 2013-12-11 A | 2013-12-12 | 120 | 60% | 0.2d | -479.4d | 0d | 김광태; 남현수 | 8h | 4.8h | 예정 |
| 122 | 4.3.2.5 | **프로그램목록작성** |  | 1d | 2013-12-12 A | 2013-12-13 |  | 50% | 0.5d | -0.5d | 0d |  | 16h | 8h | 예정 |
| 123 | 4.3.2.5.1 | PDA (검체, 포장보조, 매칭보조) |  | 0.3d | 2013-12-12 A | 2013-12-12 A | 121 | 100% |  |  |  | 김광태; 김정민 | 4.8h | 4.8h | 계획대로 |
| 124 | 4.3.2.5.2 | READING EDGE |  | 0.2d | 2013-12-12 A | 2013-12-12 A | 123 | 100% |  |  |  | 김광태; 용세중 | 3.2h | 3.2h | 계획대로 |
| 125 | 4.3.2.5.3 | 앰퓰매칭 EDGE |  | 0.3d | 2013-12-12 | 2013-12-13 | 124 |  |  | -480.4d | 0d | 김광태; 용세중 | 4.8h |  | 예정 |
| 126 | 4.3.2.5.4 | 박스매칭 EDGE |  | 0.2d | 2013-12-13 | 2013-12-13 | 125 |  |  | -480.4d | 0d | 김광태; 남현수 | 3.2h |  | 예정 |
| 127 | 4.3.2.6 | **프로그램사양서작성** |  | 1d | 2013-12-13 A | 2013-12-16 |  | 50% | 0.5d | -0.5d | 0d |  | 16h | 8h | 예정 |
| 128 | 4.3.2.6.1 | PDA (검체, 포장보조, 매칭보조) |  | 0.3d | 2013-12-13 A | 2013-12-13 A | 126 | 100% |  |  |  | 김광태; 김정민 | 4.8h | 4.8h | 계획대로 |
| 129 | 4.3.2.6.2 | READING EDGE |  | 0.2d | 2013-12-13 A | 2013-12-13 A | 128 | 100% |  |  |  | 김광태; 용세중 | 3.2h | 3.2h | 계획대로 |
| 130 | 4.3.2.6.3 | 앰퓰매칭 EDGE |  | 0.3d | 2013-12-13 | 2013-12-16 | 129 |  |  | -481.4d | 0d | 김광태; 용세중 | 4.8h |  | 예정 |
| 131 | 4.3.2.6.4 | 박스매칭 EDGE |  | 0.2d | 2013-12-16 | 2013-12-16 | 130 |  |  | -481.4d | 0d | 김광태; 남현수 | 3.2h |  | 예정 |
| 132 | 4.3.3 | 포장설계완료 | milestone | 0d | 2013-12-16 | 2013-12-16 | 131 |  |  | -481.4d | 0d |  |  |  | 예정 |

| ID | WBS | Task | Type | Duration | Start | Finish | Predecessors | Complete | Remaining | Total slack | Free slack | Resources | Work | Actual work | 완료 분석 |
| --- | --- | --- | --- | --- | --- | --- | --- | --- | --- | --- | --- | --- | --- | --- | --- |
| 133 | 4.3.4 | **발송** |  | 6d | 2013-12-16 A | 2013-12-24 |  | 50% | 3d | -0.5d | 0d |  | 96h | 48h | 예정 |
| 134 | 4.3.4.1 | **어플리케이션 구조도** |  | 1d | 2013-12-16 A | 2013-12-17 |  | 50% | 0.5d | -0.5d | 0d |  | 16h | 8h | 예정 |
| 135 | 4.3.4.1.1 | PDA (반품, 폐기, 발송보조) |  | 0.5d | 2013-12-16 A | 2013-12-16 A | 131 | 100% |  |  |  | 김광태; 김정민 | 8h | 8h | 계획대로 |
| 136 | 4.3.4.1.2 | 발송 EDGE |  | 0.5d | 2013-12-16 | 2013-12-17 | 135 |  |  | -482.4d | 0d | 김광태; 남현수 | 8h |  | 예정 |
| 137 | 4.3.4.2 | **작업흐름도** |  | 1d | 2013-12-17 A | 2013-12-18 |  | 50% | 0.5d | -0.5d | 0d |  | 16h | 8h | 예정 |
| 138 | 4.3.4.2.1 | PDA (반품, 폐기, 발송보조) |  | 0.5d | 2013-12-17 A | 2013-12-17 A | 136 | 100% |  |  |  | 김광태; 김정민 | 8h | 8h | 계획대로 |
| 139 | 4.3.4.2.2 | 발송 EDGE |  | 0.5d | 2013-12-17 | 2013-12-18 | 138 |  |  | -483.4d | 0d | 김광태; 남현수 | 8h |  | 예정 |
| 140 | 4.3.4.3 | **화면목록** |  | 1d | 2013-12-18 A | 2013-12-19 |  | 50% | 0.5d | -0.5d | 0d |  | 16h | 8h | 예정 |
| 141 | 4.3.4.3.1 | PDA (반품, 폐기, 발송보조) |  | 0.5d | 2013-12-18 A | 2013-12-18 A | 139 | 100% |  |  |  | 김광태; 김정민 | 8h | 8h | 계획대로 |
| 142 | 4.3.4.3.2 | 발송 EDGE |  | 0.5d | 2013-12-18 | 2013-12-19 | 141 |  |  | -484.4d | 0d | 김광태; 남현수 | 8h |  | 예정 |
| 143 | 4.3.4.4 | **화면정의** |  | 1d | 2013-12-19 A | 2013-12-20 |  | 50% | 0.5d | -0.5d | 0d |  | 16h | 8h | 예정 |
| 144 | 4.3.4.4.1 | PDA (반품, 폐기, 발송보조) |  | 0.5d | 2013-12-19 A | 2013-12-19 A | 142 | 100% |  |  |  | 김광태; 김정민 | 8h | 8h | 계획대로 |
| 145 | 4.3.4.4.2 | 발송 EDGE |  | 0.5d | 2013-12-19 | 2013-12-20 | 144 |  |  | -485.4d | 0d | 김광태; 남현수 | 8h |  | 예정 |
| 146 | 4.3.4.5 | **프로그램목록작성** |  | 1d | 2013-12-20 A | 2013-12-23 |  | 50% | 0.5d | -0.5d | 0d |  | 16h | 8h | 예정 |
| 147 | 4.3.4.5.1 | PDA (반품, 폐기, 발송보조) |  | 0.5d | 2013-12-20 A | 2013-12-20 A | 145 | 100% |  |  |  | 김광태; 김정민 | 8h | 8h | 계획대로 |
| 148 | 4.3.4.5.2 | 발송 EDGE |  | 0.5d | 2013-12-20 | 2013-12-23 | 147 |  |  | -486.4d | 0d | 김광태; 남현수 | 8h |  | 예정 |
| 149 | 4.3.4.6 | **프로그램사양서작성** |  | 1d | 2013-12-23 A | 2013-12-24 |  | 50% | 0.5d | -0.5d | 0d |  | 16h | 8h | 예정 |
| 150 | 4.3.4.6.1 | PDA (반품, 폐기, 발송보조) |  | 0.5d | 2013-12-23 A | 2013-12-23 A | 148 | 100% |  |  |  | 김광태; 김정민 | 8h | 8h | 계획대로 |
| 151 | 4.3.4.6.2 | 발송 EDGE |  | 0.5d | 2013-12-23 | 2013-12-24 | 150 |  |  | -491.4d | 0d | 김광태; 남현수 | 8h |  | 예정 |
| 152 | 4.3.5 | 발송설계완료 | milestone | 0d | 2013-12-24 | 2013-12-24 | 151 |  |  | -491.4d | 0d |  |  |  | 예정 |
| 153 | 4.3.6 | **설계 산출물 리뷰 및 수정** |  | 4d | 2013-12-24 | 2013-12-31 |  |  |  | -491.4d | 0d |  |  |  | 예정 |
| 154 | 4.3.6.1 | 포장 산출물 리뷰 및 수정 |  | 2d | 2013-12-24 | 2013-12-27 | 152 |  |  | -491.4d | 0d |  |  |  | 예정 |
| 155 | 4.3.6.2 | 발송 산출물 리뷰 및 수정 |  | 2d | 2013-12-27 | 2013-12-31 | 154 |  |  | -491.4d | 0d |  |  |  | 예정 |
| 156 | 4.3.7 | 설계 완료 | milestone | 0d | 2013-12-31 | 2013-12-31 | 155 |  |  | -491.4d | 0d |  |  |  | 예정 |

| ID | WBS | Task | Duration | Start | Finish | Predecessors | Complete | Remaining | Total slack | Free slack | Resources | Work | Actual work | 완료 분석 | Text1 | 차주계획율 |
| --- | --- | --- | --- | --- | --- | --- | --- | --- | --- | --- | --- | --- | --- | --- | --- | --- |
| 157 | 4.4 | **개발** | 176d | 2013-11-04 A | 2014-07-14 |  | 71% | 50.52d | 0d |  |  | 4112.8h | 1869.62h | 예정 |  |  |
| 158 | 4.4.1 | **EDGE(PC) 공통 개발** | 20.5d | 2014-01-13 A | 2014-02-11 |  | 97% | 0.66d | 0d |  | 공통 | 700.8h | 582.14h | 예정 |  |  |
| 159 | 4.4.1.1 | **LS산전 샘플 프로그램 분석 및 테스트** | 1d | 2014-01-13 A | 2014-01-14 A |  | 100% |  |  |  |  | 24h | 24h | 계획대로 |  |  |
| 160 | 4.4.1.1.1 | 검수기, 매칭기 샘플 분석 및 테스트(현재 앰플 매칭기 샘플 미개발) | 1d | 2014-01-13 A | 2014-01-14 A | 156FS+8d | 100% |  |  |  | 남현수; 용세중; 김영식 | 24h | 24h | 계획대로 |  |  |
| 161 | 4.4.1.2 | **프로그램 버전관리 개발** | 1d | 2014-01-14 A | 2014-01-15 A |  | 100% |  |  |  |  | 8h | 8h | 계획대로 |  |  |
| 162 | 4.4.1.2.1 | PC EDGE 버전관리 | 1d | 2014-01-14 A | 2014-01-15 A | 160 | 100% |  |  |  | 남현수 | 8h | 8h | 계획대로 | 100 |  |
| 163 | 4.4.1.3 | **라벨 프린팅(박스매칭기만)** | 5d | 2014-01-15 A | 2014-01-22 |  | 58% | 2.1d | 0d |  |  | 40h | 23.2h | 예정 |  |  |
| 164 | 4.4.1.3.1 | 박스 태그 인코딩(연속) | 2d | 2014-01-15 A | 2014-01-17 A | 162 | 100% |  |  |  | 남현수 | 16h | 16h | 계획대로 |  |  |
| 165 | 4.4.1.3.2 | 양식 프린팅 | 3d | 2014-01-17 A | 2014-01-22 | 164 | 30% | 2.1d | -506.4d | 0d | 남현수 | 24h | 7.2h | 예정 | 30 | 40 |
| 166 | 4.4.1.4 | **EDGE Agent 개발** | 5d | 2014-01-22 A | 2014-01-29 A |  | 100% |  |  |  |  | 40h | 40h | 계획대로 |  |  |
| 167 | 4.4.1.4.1 | 실적 정보 xml 로 쓰기 | 2d | 2014-01-22 A | 2014-01-24 A | 165 | 100% |  |  |  | 남현수 | 16h | 16h | 계획대로 |  |  |
| 168 | 4.4.1.4.2 | KEIDAS API로 호출 | 3d | 2014-01-24 A | 2014-01-29 A | 167 | 100% |  |  |  | 남현수 | 24h | 24h | 계획대로 |  |  |
| 169 | 4.4.1.5 | **RF 리더기 장비 상태 정보 개발** | 5d | 2014-01-29 A | 2014-02-06 A |  | 100% |  |  |  |  | 40h | 40h | 계획대로 |  |  |
| 170 | 4.4.1.5.1 | 리더기 Wrapper 공통 Lib. 개발 및 Sample 작성 | 5d | 2014-01-29 A | 2014-02-06 A | 168 | 100% |  |  |  | 남현수 | 40h | 40h | 계획대로 |  | 100 |
| 171 | 4.4.1.6 | **Local DB 설계,개발** | 5d | 2014-01-14 A | 2014-01-21 A |  | 100% |  |  |  |  | 40h | 40h | 계획대로 |  |  |
| 172 | 4.4.1.6.1 | 스키마 설계 | 1d | 2014-01-14 A | 2014-01-15 A | 160 | 100% |  |  |  | 용세중 | 8h | 8h | 계획대로 |  |  |
| 173 | 4.4.1.6.2 | Connection 모듈 개발 | 1d | 2014-01-15 A | 2014-01-16 A | 172 | 100% |  |  |  | 용세중 | 8h | 8h | 계획대로 |  |  |
| 174 | 4.4.1.6.3 | DB IO(Enterprise Library) | 3d | 2014-01-16 A | 2014-01-21 A | 173 | 100% |  |  |  | 용세중 | 24h | 24h | 계획대로 |  |  |
| 175 | 4.4.1.7 | **AGGREGATION(앰플매칭기,박스매칭기 API 공통으로)** | 3d | 2014-01-21 A | 2014-01-24 A |  | 100% |  |  |  |  | 24h | 24h | 계획대로 |  |  |
| 176 | 4.4.1.7.1 | Aggregation 임시 실적 전송 | 1d | 2014-01-21 A | 2014-01-22 A | 174 | 100% |  |  |  | 용세중 | 8h | 8h | 계획대로 |  |  |
| 177 | 4.4.1.7.2 | Aggregation 전체 실적 검증 | 1d | 2014-01-22 A | 2014-01-23 A | 176 | 100% |  |  |  | 용세중 | 8h | 8h | 계획대로 |  |  |
| 178 | 4.4.1.7.3 | Aggregation 완료 | 1d | 2014-01-23 A | 2014-01-24 A | 177 | 100% |  |  |  | 용세중 | 8h | 8h | 계획대로 |  |  |
| 179 | 4.4.1.8 | **마스터 정보 수신** | 11.5d | 2014-01-24 A | 2014-02-11 A |  | 100% |  |  |  |  | 72h | 72h | 계획대로 |  |  |
| 180 | 4.4.1.8.1 | 제품마스터 업데이트 : MASTER_DATA_PROCESS.SearchProductMasterList | 1d | 2014-01-24 A | 2014-01-27 A | 178 | 100% |  |  |  | 용세중 | 8h | 8h | 계획대로 |  |  |
| 181 | 4.4.1.8.2 | 거래처 마스터 업데이트 : MASTER_DATA_PROCESS.SearchClientList | 1d | 2014-01-29 A | 2014-01-30 A | 209 | 100% |  |  |  | 용세중 | 8h | 8h | 계획대로 |  |  |
| 182 | 4.4.1.8.3 | 코드 마스터 업데이트 : MASTER_DATA_PROCESS.SearchCodeList | 1d | 2014-01-30 A | 2014-02-03 A | 181 | 100% |  |  |  | 용세중 | 8h | 8h | 계획대로 |  |  |
| 183 | 4.4.1.8.4 | 포장지시 마스터 업데이트 : PACK_PROCESS.SearchPackOrder | 1d | 2014-02-03 A | 2014-02-04 A | 182 | 100% |  |  |  | 용세중 | 8h | 8h | 계획대로 |  |  |
| 184 | 4.4.1.8.5 | 발송지시업데이트 : SHIPPING_PROCESS.SearchShippingOrderList | 3d | 2014-02-04 A | 2014-02-07 A | 183 | 100% |  |  |  | 용세중 | 24h | 24h | 계획대로 |  |  |
| 185 | 4.4.1.8.6 | DB Export(xml 파일 저장) | 2d | 2014-02-07 A | 2014-02-11 A | 184 | 100% |  |  |  | 용세중 | 16h | 16h | 계획대로 |  |  |

Notes:
- 160: 성능에 대한 검수 안됨, 앰퓰을 제외한 테스트 완료
- 164: 1. Sample Program 작성 완료 및 Test 완료
- 165: 1. 태그 프린팅(양식)을 바이텍 쪽에 보내도록 요청하고 있음. (지연됨) / 2. 물리적 태그의 길이가 10.1cm(LS에서 납품할) 이지만 작성된 양식이 12cm이라 조정해서 바이텍 쪽에 / 보내기로 함. - 박지혜씨 진행 사항/ 3. 태그에 Text, Line 출력 Test 완료 / ================================================================================ / 1. LS산전으로 부터 바이텍이 Tag를 받아야 라벨 프린트 test 가능하다고 함. / (관련해서 작업 일정을 LS산전으로 부터 Tag 수령 후로 변경이 불가피 하다는 이야기 있었음. ) / 2. 한글 프린링 Test시 깨지는 문제도 상기 1번의 영향이라고 함. (이해하기 힘들지만.)
- 166: 1. Agent 개발 완료 및 Test / 2. 수정 사항에 대한 대응 작업은 필요
- 167: 마스터정보 EDGE Agent 에서 내려받기 / [답변] / 1. 마스터 정보는 폴링 간격에 의해서 내려 받는다 . (ex: 10 min. ) / 2. EDGE Agent최초 기동 시 마스터 정보를 수신한다. / 3. Config 파일에 의해서 마스터 정보 수신 Interval을 설정 가능해야 한다. / 4. 마스터 정보 완료에 대해서는 EDGE Client에 통지 하지 않는다. / (20114/01/24 - 협의 내용 : 회의 참석자: 이 재권 차장, 용 세중 차장, 남현수 차장)
- 169: 1. LS산전 쪽에서 수정한 DLL 배포에 대한 수정 반영 및 Test 필요
- 172: KMP-RF2-R4331_테이블목록_v0.1_20140123 / KMP-RF2-D4333_테이블정의서_v0.1_20140123
- 184: Keidas API 미작업
- 185: 2/21일까지 개발 예정

| ID | WBS | Task | Type | Duration | Start | Finish | Predecessors | Complete | Constraint | Resources | Work | Actual work | 완료 분석 | Text1 | 차주계획율 |
| --- | --- | --- | --- | --- | --- | --- | --- | --- | --- | --- | --- | --- | --- | --- | --- |
| 186 | 4.4.1.9 | **작업자 이벤트 Log 저장(파일)** |  | 4.6d | 2014-01-14 A | 2014-01-20 A |  | 100% |  |  | 36.8h | 36.8h | 계획대로 |  |  |
| 187 | 4.4.1.9.1 | 날짜별 로그 파일 저장 |  | 1d | 2014-01-14 A | 2014-01-15 A | 160 | 100% |  | 김영식 | 8h | 8h | 계획대로 |  |  |
| 188 | 4.4.1.9.2 | 특정 일자 이상 로그 파일 삭제 |  | 1d | 2014-01-15 A | 2014-01-16 A | 187 | 100% |  | 김영식 | 8h | 8h | 계획대로 |  |  |
| 189 | 4.4.1.9.3 | 사용자 버튼 액션 클릭시 로그 저장 기능(파일로) |  | 2.6d | 2014-01-16 A | 2014-01-20 A | 188 | 100% |  | 김영식 | 20.8h | 20.8h | 계획대로 | 38 |  |
| 190 | 4.4.1.10 | **UI 공통** |  | 14.9d | 2014-01-21 A | 2014-02-11 A |  | 100% |  |  | 212h | 212h | 계획대로 |  |  |
| 191 | 4.4.1.10.1 | 메뉴 |  | 1d | 2014-01-21 A | 2014-01-21 A | 189 | 100% |  | 김영식 | 8h | 8h | 계획대로 |  |  |
| 192 | 4.4.1.10.2 | **로그인(화면 공통화)** |  | 1d | 2014-01-22 A | 2014-01-22 A |  | 100% |  |  | 8h | 8h | 계획대로 |  |  |
| 193 | 4.4.1.10.2.1 | 로그인 |  | 0.5d | 2014-01-22 A | 2014-01-22 A | 191 | 100% |  | 김영식 | 4h | 4h | 계획대로 |  |  |
| 194 | 4.4.1.10.2.2 | 로그아웃 |  | 0.5d | 2014-01-22 A | 2014-01-22 A | 193 | 100% |  | 김영식 | 4h | 4h | 계획대로 |  |  |
| 195 | 4.4.1.10.3 | **기구물 등록(화면 공통화)** |  | 2d | 2014-01-23 A | 2014-01-24 A |  | 100% |  |  | 16h | 16h | 계획대로 |  |  |
| 196 | 4.4.1.10.3.1 | 프로그램 조회 IF : DEVICE_CONFIG_PROCESS.SearchDeviceInfoList |  | 1d | 2014-01-23 A | 2014-01-23 A | 194 | 100% |  | 김영식 | 8h | 8h | 계획대로 |  |  |
| 197 | 4.4.1.10.3.2 | 프로그램 등록 IF : DEVICE_CONFIG_PROCESS.RegisterProgram |  | 1d | 2014-01-24 A | 2014-01-24 A | 196 | 100% |  | 김영식 | 8h | 8h | 계획대로 |  |  |
| 198 | 4.4.1.10.4 | **포장지시 조회(화면 공통화)** |  | 1.55d | 2014-01-27 A | 2014-01-28 A |  | 100% |  |  | 16h | 16h | 계획대로 |  |  |
| 199 | 4.4.1.10.4.1 | 포장지시 정보 조회 IF : PACK_PROCESS.SearchPackOrder |  | 1d | 2014-01-27 A | 2014-01-27 A | 197 | 100% |  | 김영식 | 8h | 8h | 계획대로 | 90 |  |
| 200 | 4.4.1.10.4.2 | 포장지시 정보 상세 조회 IF : PACK_PROCESS.SearchPackOrderData |  | 1d | 2014-01-27 A | 2014-01-28 A | 199 | 100% |  | 김영식 | 8h | 8h | 계획대로 | 90 |  |
| 201 | 4.4.1.10.5 | **실적조회(화면 공통화)** |  | 2d | 2014-01-28 A | 2014-01-30 A |  | 100% |  |  | 16h | 16h | 계획대로 |  |  |
| 202 | 4.4.1.10.5.1 | 포장지시 정보 조회 IF : PACK_PROCESS.SearchPackOrder |  | 2d | 2014-01-28 A | 2014-01-30 A | 200 | 100% |  | 김영식 | 16h | 16h | 계획대로 |  | 100 |
| 203 | 4.4.1.10.6 | **포장지시 등록(off-line)(화면 공통화)** |  | 2d | 2014-01-30 A | 2014-02-04 A |  | 100% |  |  | 16h | 16h | 계획대로 |  |  |
| 204 | 4.4.1.10.6.1 | 포장지시 등록(Off-Line 작업) |  | 2d | 2014-01-30 A | 2014-02-04 A | 202 | 100% | finish no earlier than 2014-02-03 | 김영식 | 16h | 16h | 계획대로 |  | 100 |
| 205 | 4.4.1.10.7 | 로그뷰어 |  | 7d | 2014-01-29 A | 2014-02-07 A |  | 100% | finish no earlier than 2014-02-07 | 남현수 | 56h | 56h | 계획대로 |  |  |
| 206 | 4.4.1.10.8 | 프로그램 정보 보기 |  | 1d | 2014-01-29 A | 2014-01-29 A |  | 100% | finish no earlier than 2014-01-29 | 남현수 | 8h | 8h | 계획대로 |  |  |
| 207 | 4.4.1.10.9 | 네트워크 접속 상태 체크 |  | 0.5d | 2014-01-27 A | 2014-01-27 A | 180 | 100% |  | 용세중 | 4h | 4h | 계획대로 |  |  |
| 208 | 4.4.1.10.10 | 환경 정보 설정 API |  | 1.5d | 2014-01-27 A | 2014-01-29 A | 207 | 100% |  | 용세중 | 12h | 12h | 계획대로 |  |  |
| 209 | 4.4.1.10.11 | 암호화 API |  | 0.5d | 2014-01-29 A | 2014-01-29 A | 208 | 100% |  | 용세중 | 4h | 4h | 계획대로 |  |  |
| 210 | 4.4.1.10.12 | RFID 리더기 접속 상태 |  | 1d | 2014-01-29 A | 2014-01-29 A |  | 100% | finish no earlier than 2014-01-29 | 남현수 | 8h | 8h | 계획대로 |  |  |
| 211 | 4.4.1.10.13 | 베이스 폼 및 사용 Sample |  | 1d | 2014-01-29 A | 2014-01-29 A |  | 100% | finish no earlier than 2014-01-29 | 남현수 | 8h | 8h | 계획대로 |  |  |
| 212 | 4.4.1.10.14 | 공통 메시지 팝업 |  | 1d | 2014-01-29 A | 2014-01-29 A |  | 100% | finish no earlier than 2014-01-29 | 남현수 | 8h | 8h | 계획대로 |  |  |
| 213 | 4.4.1.10.15 | 공통 팝업 |  | 3d | 2014-01-27 A | 2014-01-29 A |  | 100% | finish no earlier than 2014-01-29 | 남현수 | 24h | 24h | 계획대로 |  |  |
| 214 | 4.4.1.10.16 | 공통기능개발완료(용세중) | milestone | 0d | 2014-02-11 A | 2014-02-11 A | 185 | 100% |  | 용세중 |  |  | 계획대로 |  |  |
| 215 | 4.4.1.10.17 | 공통기능개발완료(김영식) | milestone | 0d | 2014-02-04 A | 2014-02-04 A | 204 | 100% |  | 김영식 |  |  | 계획대로 |  |  |
| 216 | 4.4.1.10.18 | 공통기능개발완료(남현수) | milestone | 0d | 2014-02-06 A | 2014-02-06 A | 170 | 100% | finish no earlier than 2014-02-06 | 남현수 |  |  | 계획대로 |  |  |
| 217 | 4.4.1.11 | 공통기능개발완료 | milestone | 0d | 2014-02-11 A | 2014-02-11 A | 214, 215, 216 | 100% |  | 용세중; 남현수; 김영식 |  |  | 계획대로 |  |  |

Notes:
- 189: 사용자 이벤트 로그는 각 기구물 소스에서 작성해야 하며, 앰퓰매칭기 개발 시 추가중. / 로그메시지 포맷은 차주 확정 예정
- 191: 메뉴 구성은 각 기구물 메인 화면에서 구성하기로 함.
- 194: API 없음
- 198: 데이터 그리드 사용하여 다시 작업

| ID | WBS | Task | Type | Duration | Start | Finish | Predecessors | Complete | Remaining | Total slack | Constraint | Resources | Work | Actual work | 완료 분석 |
| --- | --- | --- | --- | --- | --- | --- | --- | --- | --- | --- | --- | --- | --- | --- | --- |
| 218 | 4.4.2 | **READING EDGE S/W** |  | 10d | 2014-02-11 A | 2014-02-25 |  | 99% | 0d | 0d |  | 용세중 | 184h | 176h | 예정 |
| 219 | 4.4.2.1 | **개별 개발** |  | 9d | 2014-02-11 A | 2014-02-24 A |  | 100% |  |  |  |  | 96h | 96h | 계획대로 |
| 220 | 4.4.2.1.1 | **TAG 검사결과 화면** |  | 3d | 2014-02-11 A | 2014-02-14 A |  | 100% |  |  |  | 용세중 | 48h | 48h | 계획대로 |
| 221 | 4.4.2.1.1.1 | 현재 RF리딩 데이터 실시간 Display(RF리딩 모듈) |  | 3d | 2014-02-11 A | 2014-02-14 A | 185 | 100% |  |  | start no earlier than 2014-02-11 | 용세중 | 24h | 24h | 계획대로 |
| 222 | 4.4.2.1.2 | **포장시작(작업시작)** |  | 1d | 2014-02-14 A | 2014-02-17 A |  | 100% |  |  | start no earlier than 2014-02-14 |  | 8h | 8h | 계획대로 |
| 223 | 4.4.2.1.2.1 | 포장 시작(포장중) IF : PACK_PROCESS.CommandPackStart |  | 0.5d | 2014-02-14 A | 2014-02-17 A | 221 | 100% |  |  | start no earlier than 2014-02-14 | 용세중 | 4h | 4h | 계획대로 |
| 224 | 4.4.2.1.2.2 | 포장 임시 실적 전송 IF : PACK_PROCESS.CommandPackTempResultEX |  | 0.5d | 2014-02-17 A | 2014-02-17 A | 223 | 100% |  |  | start no earlier than 2014-02-17 | 용세중 | 4h | 4h | 계획대로 |
| 225 | 4.4.2.1.3 | **포장중지(작업중지)** |  | 0.5d | 2014-02-17 A | 2014-02-18 A |  | 100% |  |  | start no earlier than 2014-02-17 |  | 4h | 4h | 계획대로 |
| 226 | 4.4.2.1.3.1 | 포장일시중지 IF : PACK_PROCESS.CommandPackPause |  | 0.5d | 2014-02-17 A | 2014-02-18 A | 224 | 100% |  |  | start no earlier than 2014-02-17 | 용세중 | 4h | 4h | 계획대로 |
| 227 | 4.4.2.1.4 | **포장지시 확정** |  | 0.5d | 2014-02-18 A | 2014-02-18 A |  | 100% |  |  | start no earlier than 2014-02-18 |  | 4h | 4h | 계획대로 |
| 228 | 4.4.2.1.4.1 | 포장 지시 확정 IF : PACK_PROCESS.CommandPackSTLM |  | 0.5d | 2014-02-18 A | 2014-02-18 A | 226 | 100% |  |  | start no earlier than 2014-02-18 | 용세중 | 4h | 4h | 계획대로 |
| 229 | 4.4.2.1.5 | **포장지시 확정 취소** |  | 0.5d | 2014-02-18 A | 2014-02-19 A |  | 100% |  |  | start no earlier than 2014-02-18 |  | 4h | 4h | 계획대로 |
| 230 | 4.4.2.1.5.1 | 포장취소 IF : PACK_PROCESS.CommandPackCancel (기존 "포장취소" IF 와 기능이 달라 API 요청) |  | 0.5d | 2014-02-18 A | 2014-02-19 A | 228 | 100% |  |  | start no earlier than 2014-02-18 | 용세중 | 4h | 4h | 계획대로 |
| 231 | 4.4.2.1.6 | **포장 취소** |  | 0.5d | 2014-02-19 A | 2014-02-19 A |  | 100% |  |  | start no earlier than 2014-02-18 |  | 4h | 4h | 계획대로 |
| 232 | 4.4.2.1.6.1 | 포장취소 IF : PACK_PROCESS.CommandPackCancel (기존 "포장취소" IF 와 기능이 달라 API 요청) |  | 0.5d | 2014-02-19 A | 2014-02-19 A | 230 | 100% |  |  | start no earlier than 2014-02-18 | 용세중 | 4h | 4h | 계획대로 |
| 233 | 4.4.2.1.7 | **재처리** |  | 0.5d | 2014-02-19 A | 2014-02-20 A |  | 100% |  |  | start no earlier than 2014-02-19 |  | 4h | 4h | 계획대로 |
| 234 | 4.4.2.1.7.1 | 포장 임시 실적 전송 IF : PACK_PROCESS.CommandPackTempResultEX |  | 0.5d | 2014-02-19 A | 2014-02-20 A | 232 | 100% |  |  | start no earlier than 2014-02-19 | 용세중 | 4h | 4h | 계획대로 |
| 235 | 4.4.2.1.8 | **재포장** |  | 1d | 2014-02-20 A | 2014-02-21 A |  | 100% |  |  |  |  | 8h | 8h | 계획대로 |
| 236 | 4.4.2.1.8.1 | 재포장정보수신(API 없음) |  | 0.5d | 2014-02-20 A | 2014-02-20 A | 234 | 100% |  |  | start no earlier than 2014-02-19 | 용세중 | 4h | 4h | 계획대로 |
| 237 | 4.4.2.1.8.2 | 포장 임시 실적 전송 IF : PACK_PROCESS.CommandPackTempResultEX |  | 0.5d | 2014-02-20 A | 2014-02-21 A | 236 | 100% |  |  | start no earlier than 2014-02-20 | 용세중 | 4h | 4h | 계획대로 |
| 238 | 4.4.2.1.9 | **포장작업결과('작업완료' 버튼 클릭 시 '포장작업결과' 화면 호출)** |  | 1.5d | 2014-02-21 A | 2014-02-24 A |  | 100% |  |  |  |  | 12h | 12h | 계획대로 |
| 239 | 4.4.2.1.9.1 | 실 포장 수량 전송 IF : PACK_PROCESS.CommandPackRealResultQty |  | 0.5d | 2014-02-21 A | 2014-02-21 A | 237 | 100% |  |  | start no earlier than 2014-02-19 | 용세중 | 4h | 4h | 계획대로 |
| 240 | 4.4.2.1.9.2 | 포장완료 IF : PACK_PROCESS.CommandPackComplete |  | 1d | 2014-02-21 A | 2014-02-24 A | 239 | 100% |  |  | start no earlier than 2014-02-19 | 용세중 | 8h | 8h | 계획대로 |
| 241 | 4.4.2.2 | **TB_TempResult 데이터 주기적 삭제 기능 추가** |  | 1d | 2014-02-24 A | 2014-02-25 A | 240 | 100% |  |  |  | 용세중 | 8h | 8h | 계획대로 |
| 242 | 4.4.2.2.1 | READING EDGE S/W 완료 | milestone | 0d | 2014-02-24 A | 2014-02-24 A | 240 | 100% |  |  |  |  |  |  | 계획대로 |

Notes:
- 221: 로그 저장하는 샘플

| ID | WBS | Task | Type | Duration | Start | Finish | Predecessors | Complete | Remaining | Total slack | Free slack | Constraint | Resources | Work | Actual work | 완료 분석 | Text1 | 차주계획율 |
| --- | --- | --- | --- | --- | --- | --- | --- | --- | --- | --- | --- | --- | --- | --- | --- | --- | --- | --- |
| 243 | 4.4.3 | **앰퓰 매칭 EDGE S/W** |  | 112.45d | 2014-02-04 A | 2014-07-14 |  | 67% | 37.48d | 0d |  |  | 김영식 | 963.6h | 80h | 예정 |  |  |
| 244 | 4.4.3.1 | **개별 개발** |  | 13.45d | 2014-02-04 A | 2014-02-21 A |  | 100% |  |  |  |  |  | 80h | 80h | 계획대로 |  |  |
| 245 | 4.4.3.1.1 | **재포장** |  | 2.5d | 2014-02-04 A | 2014-02-07 A |  | 100% |  |  |  |  |  | 20h | 20h | 계획대로 |  |  |
| 246 | 4.4.3.1.1.1 | 재포장정보수신(API 없음) |  | 0.5d | 2014-02-04 A | 2014-02-05 A | 215 | 100% |  |  |  |  | 김영식 | 4h | 4h | 계획대로 |  |  |
| 247 | 4.4.3.1.1.2 | Aggregation 임시 실적 전송 IF : AGGREGATION_PROCESS.RegistrationAggregationResult |  | 1d | 2014-02-05 A | 2014-02-06 A | 246 | 100% |  |  |  |  | 김영식 | 8h | 8h | 계획대로 |  |  |
| 248 | 4.4.3.1.1.3 | Aggregation 완료 IF : AGGREGATION_PROCESS.CompleteAggregation |  | 1d | 2014-02-06 A | 2014-02-07 A | 247 | 100% |  |  |  |  | 김영식 | 8h | 8h | 계획대로 |  |  |
| 249 | 4.4.3.1.2 | **재처리** |  | 1d | 2014-02-07 A | 2014-02-10 A |  | 100% |  |  |  |  |  | 8h | 8h | 계획대로 |  |  |
| 250 | 4.4.3.1.2.1 | Aggregation 임시 실적 전송 IF : AGGREGATION_PROCESS.RegistrationAggregationResult |  | 0.5d | 2014-02-07 A | 2014-02-07 A | 248 | 100% |  |  |  |  | 김영식 | 4h | 4h | 계획대로 |  |  |
| 251 | 4.4.3.1.2.2 | Aggregation 완료 IF : AGGREGATION_PROCESS.CompleteAggregation |  | 0.5d | 2014-02-07 A | 2014-02-10 A | 250 | 100% |  |  |  |  | 김영식 | 4h | 4h | 계획대로 | 50 |  |
| 252 | 4.4.3.1.3 | **포장시작(작업시작) - 앰플 매칭** |  | 1d | 2014-02-13 A | 2014-02-14 A |  | 100% |  |  |  |  |  | 8h | 8h | 계획대로 |  |  |
| 253 | 4.4.3.1.3.1 | 포장 시작(포장중) IF : PACK_PROCESS.CommandPackStart |  | 0.5d | 2014-02-13 A | 2014-02-13 A | 251 | 100% |  |  |  |  | 김영식 | 4h | 4h | 계획대로 |  | 100 |
| 254 | 4.4.3.1.3.2 | Aggregation 임시 실적 전송 IF : AGGREGATION_PROCESS.RegistrationAggregationResult |  | 0.5d | 2014-02-14 A | 2014-02-14 A | 253 | 100% |  |  |  |  | 김영식 | 4h | 4h | 계획대로 |  | 100 |
| 255 | 4.4.3.1.4 | **포장중지(작업중지)** |  | 0.5d | 2014-02-14 A | 2014-02-14 A |  | 100% |  |  |  |  |  | 4h | 4h | 계획대로 |  |  |
| 256 | 4.4.3.1.4.1 | 포장일시중지 IF : PACK_PROCESS.CommandPackPause |  | 0.5d | 2014-02-14 A | 2014-02-14 A | 254 | 100% |  |  |  |  | 김영식 | 4h | 4h | 계획대로 |  | 100 |
| 257 | 4.4.3.1.5 | **포장지시 확정** |  | 0.5d | 2014-02-17 A | 2014-02-17 A |  | 100% |  |  |  |  |  | 4h | 4h | 계획대로 |  |  |
| 258 | 4.4.3.1.5.1 | 포장 지시 확정 IF : PACK_PROCESS.CommandPackSTLM |  | 0.5d | 2014-02-17 A | 2014-02-17 A | 256 | 100% |  |  |  |  | 김영식 | 4h | 4h | 계획대로 |  |  |
| 259 | 4.4.3.1.6 | **포장지시 확정 취소** |  | 0.5d | 2014-02-17 A | 2014-02-17 A |  | 100% |  |  |  |  |  | 4h | 4h | 계획대로 |  |  |
| 260 | 4.4.3.1.6.1 | 포장취소 IF : PACK_PROCESS.CommandPackCancel (기존 "포장취소" IF 와 기능이 달라 API 요청?) |  | 0.5d | 2014-02-17 A | 2014-02-17 A | 258 | 100% |  |  |  |  | 김영식 | 4h | 4h | 계획대로 |  |  |
| 261 | 4.4.3.1.7 | **포장작업결과('작업완료' 버튼 클릭 시 '포장작업결과' 화면 호출)** |  | 1d | 2014-02-18 A | 2014-02-18 A |  | 100% |  |  |  |  |  | 8h | 8h | 계획대로 |  |  |
| 262 | 4.4.3.1.7.1 | 실 포장 수량 전송 IF : PACK_PROCESS.CommandPackRealResultQty |  | 1d | 2014-02-18 A | 2014-02-18 A | 260 | 100% |  |  |  |  | 김영식 | 8h | 8h | 계획대로 |  |  |
| 263 | 4.4.3.1.8 | **TAG 검사결과 화면** |  | 3d | 2014-02-19 A | 2014-02-21 A |  | 100% |  |  |  |  |  | 24h | 24h | 계획대로 |  |  |
| 264 | 4.4.3.1.8.1 | 현재 RF리딩 데이터 실시간 Display(RF리딩 모듈) |  | 3d | 2014-02-19 A | 2014-02-21 A | 261 | 100% |  |  |  |  | 김영식 | 24h | 24h | 계획대로 |  |  |
| 265 | 4.4.3.2 | **통합 테스트 및 추가 사항(연동 테스트 BASE)** |  | 89d | 2014-03-10 | 2014-07-14 |  |  |  |  |  |  |  | 40h |  | 예정 |  |  |
| 266 | 4.4.3.2.1 | 포장 시작 임시실적 전송 KEIDAS Interface TEST 및 실데이터 인코딩, 검증 프로세스 추가 |  | 1d | 2014-03-10 | 2014-03-10 |  |  |  | 88d |  | start no earlier than 2014-03-10 | 김영식 | 8h |  | 예정 |  |  |
| 267 | 4.4.3.2.2 | 포장중지 상태 변경 KEIDAS Interface TEST 및 실기구물 테스트 |  | 1d | 2014-03-11 | 2014-03-11 |  |  |  | -543d | 0d | start no earlier than 2014-03-11 | 김영식 | 8h |  | 예정 |  |  |
| 268 | 4.4.3.2.3 | 프로그램,프로세스 디파인, 변경 및 추가 사항 협의 |  | 1d | 2014-03-12 | 2014-03-12 | 267 |  |  | -543d | 0d |  | 김영식 | 8h |  | 예정 |  |  |
| 269 | 4.4.3.2.4 | 변경 추가사항 추가 개발 |  | 1d | 2014-03-13 | 2014-03-13 | 268 |  |  | -543d | 0d |  | 김영식 | 8h |  | 예정 |  |  |
| 270 | 4.4.3.2.5 | 통합 연동테스트 |  | 1d | 2014-03-14 | 2014-03-14 | 269 |  |  | -543d | 0d |  | 김영식 | 8h |  | 예정 |  |  |
| 271 | 4.4.3.3 | 앰퓰 매칭 EDGE S/W 완료 | milestone | 0d | 2014-02-21 A | 2014-03-14 | 270 | 99% | 0d | 0d |  | finish no earlier than 2014-03-14 |  |  |  | 예정 |  |  |

Notes:
- 245: KEIDAS API 제공안되었음
- 252: 기구물 연동 처리 미개발(RF리더기 장비테스트)
- 255: 기구물 연동 처리 미개발(RF리더기 장비테스트)

| ID | WBS | Task | Type | Duration | Start | Finish | Predecessors | Complete | Remaining | Total slack | Free slack | Constraint | Resources | Work | Actual work | 완료 분석 | Text1 | 차주계획율 |
| --- | --- | --- | --- | --- | --- | --- | --- | --- | --- | --- | --- | --- | --- | --- | --- | --- | --- | --- |
| 272 | 4.4.4 | **박스 매칭 EDGE S/W** |  | 27.73d | 2014-02-07 A | 2014-03-19 |  | 60% | 11.09d | -6d | 0d |  | 이창호 | 697.4h | 258.08h | 예정 |  |  |
| 273 | 4.4.4.1 | **개별 개발** |  | 27.73d | 2014-02-07 A | 2014-03-19 |  | 60% | 11.09d | -6d | 0d |  | 이창호 | 475.6h | 125h | 예정 |  |  |
| 274 | 4.4.4.1.1 | **재처리** |  | 14.72d | 2014-02-07 A | 2014-02-28 |  | 99% | 0d | 0d |  |  | 이창호 | 149.8h | 54.4h | 예정 |  |  |
| 275 | 4.4.4.1.1.1 | Aggregation 임시 실적 전송 IF : AGGREGATION_PROCESS.RegistrationAggregationResult |  | 2d | 2014-02-07 A | 2014-02-28 A | 371 | 100% |  |  |  |  | 이창호 | 16h | 16h | 계획대로 | 70 | 100 |
| 276 | 4.4.4.1.1.2 | Aggregation 완료 IF : AGGREGATION_PROCESS.CompleteAggregation |  | 2d | 2014-02-11 A | 2014-02-28 A | 275 | 100% |  |  |  |  | 이창호 | 16h | 16h | 계획대로 | 70 | 100 |
| 277 | 4.4.4.1.2 | **매칭시작(작업시작)** |  | 4d | 2014-02-28 A | 2014-03-06 A |  | 100% |  |  |  |  |  | 32h | 32h | 계획대로 |  |  |
| 278 | 4.4.4.1.2.1 | 포장 시작(포장중) IF : PACK_PROCESS.CommandPackStart |  | 2d | 2014-02-28 A | 2014-03-04 A | 276 | 100% |  |  |  |  | 이창호 | 16h | 16h | 계획대로 |  |  |
| 279 | 4.4.4.1.2.2 | Aggregation 임시 실적 전송 IF : AGGREGATION_PROCESS.RegistrationAggregationResult |  | 2d | 2014-03-04 A | 2014-03-06 A | 278 | 100% |  |  |  |  | 이창호 | 16h | 16h | 계획대로 |  |  |
| 280 | 4.4.4.1.3 | **매칭중지(작업중지)** |  | 1d | 2014-03-06 A | 2014-03-07 A |  | 100% |  |  |  |  |  | 8h | 8h | 계획대로 |  |  |
| 281 | 4.4.4.1.3.1 | 포장일시중지 IF : PACK_PROCESS.CommandPackPause |  | 1d | 2014-03-06 A | 2014-03-07 A | 279 | 100% |  |  |  |  | 이창호 | 8h | 8h | 계획대로 |  |  |
| 282 | 4.4.4.1.4 | **매칭완료(작업완료)** |  | 2d | 2014-03-07 A | 2014-03-11 |  | 60% | 0.8d | 0d |  |  |  | 16h | 9.6h | 예정 |  |  |
| 283 | 4.4.4.1.4.1 | 실 포장 수량 전송 IF : PACK_PROCESS.CommandPackRealResultQty |  | 2d | 2014-03-07 A | 2014-03-11 | 281 | 60% | 0.8d | -565.62d | 0d |  | 이창호 | 16h | 9.6h | 예정 |  |  |
| 284 | 4.4.4.1.5 | **라벨 재발행** |  | 2d | 2014-03-11 | 2014-03-13 |  |  |  | -565.62d | 0d |  |  | 16h |  | 예정 |  |  |
| 285 | 4.4.4.1.5.1 | 라벨 재발행 |  | 2d | 2014-03-11 | 2014-03-13 | 283 |  |  | -565.62d | 0d |  | 이창호 | 16h |  | 예정 |  |  |
| 286 | 4.4.4.1.6 | **TAG 검사결과 화면** |  | 4d | 2014-03-13 | 2014-03-19 |  |  |  | -565.62d | 0d |  |  | 32h |  | 예정 |  |  |
| 287 | 4.4.4.1.6.1 | 현재 RF리딩 데이터 실시간 Display(RF리딩 모듈) |  | 4d | 2014-03-13 | 2014-03-19 | 285 |  |  | -565.62d | 0d |  | 이창호 | 32h |  | 예정 |  |  |
| 288 | 4.4.4.2 | 박스 매칭 EDGE S/W 완료 | milestone | 0d | 2014-03-19 | 2014-03-19 | 287 |  |  | -565.62d | 0d |  |  |  |  | 예정 |  |  |
| 289 | 4.4.5 | **발송 EDGE S/W** |  | 81.35d | 2013-11-04 A | 2014-02-28 |  | 99% | 0d | 0d |  |  | 남현수 | 226h | 226h | 예정 |  |  |
| 290 | 4.4.5.1 | **개별 개발** |  | 81.35d | 2013-11-04 A | 2014-02-28 A |  | 100% |  |  |  |  |  | 146.4h | 146.4h | 계획대로 |  |  |
| 291 | 4.4.5.1.1 | 오프라인 조회 기능 |  | 6.2d | 2014-02-06 A | 2014-02-14 A | 216 | 100% |  |  |  | finish no earlier than 2014-02-14 | 남현수 | 49.6h | 49.6h | 계획대로 |  |  |
| 292 | 4.4.5.1.2 | **발송검수 메인** |  | 11.4d | 2014-02-10 A | 2014-02-25 A |  | 100% |  |  |  |  |  | 64h | 64h | 계획대로 |  |  |
| 293 | 4.4.5.1.2.1 | 검수시작 IF - SEND_PROCESS.SearchShippingOrderList() |  | 1d | 2014-02-10 A | 2014-02-17 A | 291 | 100% |  |  |  |  | 남현수 | 8h | 8h | 계획대로 |  |  |
| 294 | 4.4.5.1.2.2 | 발송확정 취소 IF - SHIPPING_PROCESS.CancelShippingByShippingOrderNumber() SHIPPING_PROCESS.SearchShippingStatusDivCodeList() |  | 1d | 2014-02-11 A | 2014-02-18 A | 293 | 100% |  |  |  |  | 남현수 | 8h | 8h | 계획대로 |  |  |
| 295 | 4.4.5.1.2.3 | 발송실적 전송 IF - SHIPPING_PROCESS.RegisterShippingProductResult() |  | 1d | 2014-02-12 A | 2014-02-19 A | 294 | 100% |  |  |  |  | 남현수 | 8h | 8h | 계획대로 |  |  |
| 296 | 4.4.5.1.2.4 | 다시읽기 IF - rescan() |  | 1d | 2014-02-13 A | 2014-02-20 A | 295 | 100% |  |  |  |  | 남현수 | 8h | 8h | 계획대로 |  |  |
| 297 | 4.4.5.1.2.5 | 검수완료 IF - SHIPPING_PROCESS.CompleteShipping() |  | 1d | 2014-02-14 A | 2014-02-21 A | 296 | 100% |  |  |  |  | 남현수 | 8h | 8h | 계획대로 |  |  |
| 298 | 4.4.5.1.2.6 | 일시정지 IF - pause() |  | 1d | 2014-02-17 A | 2014-02-24 A | 297 | 100% |  |  |  |  | 남현수 | 8h | 8h | 계획대로 |  |  |
| 299 | 4.4.5.1.2.7 | 발송취소 IF - SHIPPING_PROCESS.CancelShippingByShippingOrderNumber() |  | 1d | 2014-02-18 A | 2014-02-24 A | 298 | 100% |  |  |  |  | 남현수 | 8h | 8h | 계획대로 |  |  |
| 300 | 4.4.5.1.2.8 | 발송박스 재포장 IF - SHIPPING_PROCESS.CancelShippingByShippingOrderNumber() |  | 1d | 2014-02-19 A | 2014-02-25 A | 299 | 100% |  |  |  |  | 남현수 | 8h | 8h | 계획대로 |  |  |

Notes:
- 295: KEIDAS 실적 API 없음

| ID | WBS | Task | Type | Duration | Start | Finish | Predecessors | Complete | Remaining | Total slack | Free slack | Constraint | Resources | Work | Actual work | 완료 분석 |
| --- | --- | --- | --- | --- | --- | --- | --- | --- | --- | --- | --- | --- | --- | --- | --- | --- |
| 301 | 4.4.5.1.3 | **발송지시 조회** |  | 81.35d | 2013-11-04 A | 2014-02-28 A |  | 100% |  |  |  |  |  | 24.8h | 24.8h | 계획대로 |
| 302 | 4.4.5.1.3.1 | 작업상태 코드 조회 IF |  | 1d | 2014-02-20 A | 2014-02-26 A | 300 | 100% |  |  |  |  | 남현수 | 8h | 8h | 계획대로 |
| 303 | 4.4.5.1.3.2 | TAG로 읽기 IF - SHIPPING_PROCESS.SearchShippingBoxInfoByHexTag() |  | 1d | 2014-02-21 A | 2014-02-27 A | 302 | 100% |  |  |  |  | 남현수 | 8h | 8h | 계획대로 |
| 304 | 4.4.5.1.3.3 | 발송지시 조회 IF - SHIPPING_PROCESS.SearchShippingOrderList() |  | 1d | 2014-02-24 A | 2014-02-28 A | 303 | 100% |  |  |  |  | 남현수 | 8h | 8h | 계획대로 |
| 305 | 4.4.5.1.3.4 | KEYBOARD 입력 처리 |  | 0.1d | 2013-11-04 A | 2013-11-04 A |  | 100% |  |  |  |  | 남현수 | 0.8h | 0.8h | 계획대로 |
| 306 | 4.4.5.1.3.5 | 달력 콘트롤 추가 |  | 1d | 2013-11-04 A | 2013-11-04 A |  | 100% |  |  |  |  |  |  |  | 계획대로 |
| 307 | 4.4.5.1.3.6 | 오프라인 박스채번 모듈 개발 |  | 3d | 2013-11-12 A | 2013-11-14 A |  | 100% |  |  |  | finish no earlier than 2013-11-14 |  |  |  | 계획대로 |
| 308 | 4.4.5.1.4 | **발송확정** |  | 1d | 2014-02-26 A | 2014-02-27 A |  | 100% |  |  |  |  |  | 8h | 8h | 계획대로 |
| 309 | 4.4.5.1.4.1 | 발송확정 IF - SHIPPING_PROCESS.ConfirmShippingOrder() |  | 1d | 2014-02-26 A | 2014-02-27 A | 305 | 100% |  |  |  |  | 남현수 | 8h | 8h | 계획대로 |
| 310 | 4.4.5.2 | 발송 EDGE S/W 완료 | milestone | 0d | 2014-02-27 | 2014-02-27 | 309 |  |  | -551.5d | 0d |  |  |  |  | 예정 |
| 311 | 4.4.6 | PC 개발 완료 | milestone | 0d | 2014-03-19 | 2014-03-19 | 242, 271, 288, 310 |  |  | -565.62d | 0d |  | 김영식; 남현수; 용세중 |  |  | 예정 |
| 312 | 4.4.7 | **EDGE(PDA) 공통 개발** |  | 9d | 2014-01-13 A | 2014-01-24 |  | 98% | 0.14d | 0d |  |  | 김정민; 이창호 | 276h | 130h | 예정 |
| 313 | 4.4.7.1 | **로컬 데이터 베이스** |  | 1d | 2014-01-13 A | 2014-01-14 A |  | 100% |  |  |  |  |  | 8h | 8h | 계획대로 |
| 314 | 4.4.7.1.1 | **스키마 설계** |  | 1d | 2014-01-13 A | 2014-01-14 A |  | 100% |  |  |  |  |  | 8h | 8h | 계획대로 |
| 315 | 4.4.7.1.1.1 | 마스터 코드 테이블 작성 |  | 1d | 2014-01-13 A | 2014-01-14 A | 156FS+8d | 100% |  |  |  |  | 이창호 | 8h | 8h | 계획대로 |
| 316 | 4.4.7.2 | **전역 클래스** |  | 1d | 2014-01-14 A | 2014-01-15 A |  | 100% |  |  |  |  |  | 8h | 8h | 계획대로 |
| 317 | 4.4.7.2.1 | 전역 클래스 설계 |  | 1d | 2014-01-14 A | 2014-01-15 A | 315 | 100% |  |  |  |  | 이창호 | 8h | 8h | 계획대로 |
| 318 | 4.4.7.3 | **네트워크** |  | 6d | 2014-01-13 A | 2014-01-21 A |  | 100% |  |  |  |  |  | 48h | 48h | 계획대로 |
| 319 | 4.4.7.3.1 | **커넥션 매니져 설계 및 개발** |  | 6d | 2014-01-13 A | 2014-01-21 A |  | 100% |  |  |  |  |  | 48h | 48h | 계획대로 |
| 320 | 4.4.7.3.1.1 | 3G 라이브러리 연동 테스트 |  | 2d | 2014-01-13 A | 2014-01-15 A | 156FS+8d | 100% |  |  |  |  | 김정민 | 16h | 16h | 계획대로 |
| 321 | 4.4.7.3.1.2 | Wifi 라이브러리 연동 테스트 |  | 2d | 2014-01-15 A | 2014-01-17 A | 320 | 100% |  |  |  |  | 김정민 | 16h | 16h | 계획대로 |
| 322 | 4.4.7.3.1.3 | 3G Wifi 스위치 모듈 개발 및 테스트 |  | 2d | 2014-01-17 A | 2014-01-21 A | 321 | 100% |  |  |  |  | 김정민 | 16h | 16h | 계획대로 |
| 323 | 4.4.7.4 | **RFID** |  | 3d | 2014-01-21 A | 2014-01-24 A |  | 100% |  |  |  |  |  | 24h | 24h | 계획대로 |
| 324 | 4.4.7.4.1 | **RFID 컨트롤 클래스 설계 및 개발** |  | 3d | 2014-01-21 A | 2014-01-24 A |  | 100% |  |  |  |  |  | 24h | 24h | 계획대로 |
| 325 | 4.4.7.4.1.1 | 전원 컨트롤 모듈 개발 및 테스트 |  | 1d | 2014-01-21 A | 2014-01-22 A | 322 | 100% |  |  |  |  | 김정민 | 8h | 8h | 계획대로 |
| 326 | 4.4.7.4.1.2 | 스캔 파워 컨트롤 모듈 개발 및 테스트 |  | 1d | 2014-01-22 A | 2014-01-23 A | 325 | 100% |  |  |  |  | 김정민 | 8h | 8h | 계획대로 |
| 327 | 4.4.7.4.1.3 | 이벤트 핸들러 개발 및 테스트 |  | 1d | 2014-01-23 A | 2014-01-24 A | 326 | 100% |  |  |  |  | 김정민 | 8h | 8h | 계획대로 |

Notes:
- 303: 해당 Method는 기존 배포본 에는 있었으나 현재 배포본에는 함수 자체가 없음. / [2014.02.14] KEIDAS 팀에게 지속 적으로 요청 하고 있으나 KEIDAS 내부 업무 전달 시 누락으로 지연된다고 함.
- 312: jaekwon : 공통 기능 개발 완료가 된건지?

| ID | WBS | Task | Type | Duration | Start | Finish | Predecessors | Complete | Remaining | Total slack | Free slack | Resources | Work | Actual work | 완료 분석 | 차주계획율 |
| --- | --- | --- | --- | --- | --- | --- | --- | --- | --- | --- | --- | --- | --- | --- | --- | --- |
| 328 | 4.4.7.5 | **화면 개발** |  | 5.5d | 2014-01-15 A | 2014-01-22 |  | 95% | 0.25d | 0d |  |  | 44h | 42h | 예정 |  |
| 329 | 4.4.7.5.1 | **메인화면** |  | 1d | 2014-01-15 A | 2014-01-16 A |  | 100% |  |  |  |  | 8h | 8h | 계획대로 |  |
| 330 | 4.4.7.5.1.1 | 메인화면 개발 및 테스트 |  | 0.5d | 2014-01-15 A | 2014-01-15 A | 317 | 100% |  |  |  | 이창호 | 4h | 4h | 계획대로 |  |
| 331 | 4.4.7.5.1.2 | 로그인 화면 개발 및 테스트 |  | 0.5d | 2014-01-15 A | 2014-01-16 A | 330 | 100% |  |  |  | 이창호 | 4h | 4h | 계획대로 |  |
| 332 | 4.4.7.5.2 | **로컬정보갱신** |  | 3d | 2014-01-16 A | 2014-01-21 A |  | 100% |  |  |  |  | 24h | 24h | 계획대로 |  |
| 333 | 4.4.7.5.2.1 | 로컬정보갱신 |  | 3d | 2014-01-16 A | 2014-01-21 A | 331 | 100% |  |  |  | 이창호 | 24h | 24h | 계획대로 |  |
| 334 | 4.4.7.5.3 | **태그확인** |  | 0.5d | 2014-01-21 A | 2014-01-21 |  | 50% | 0.25d | 0d |  |  | 4h | 2h | 예정 |  |
| 335 | 4.4.7.5.3.1 | 태그확인 |  | 0.5d | 2014-01-21 A | 2014-01-21 | 333 | 50% | 0.25d | -505.9d | 0d | 이창호 | 4h | 2h | 예정 |  |
| 336 | 4.4.7.5.4 | **프로그램버전** |  | 0.5d | 2014-01-21 A | 2014-01-22 A |  | 100% |  |  |  |  | 4h | 4h | 계획대로 |  |
| 337 | 4.4.7.5.4.1 | 프로그램버전 |  | 0.5d | 2014-01-21 A | 2014-01-22 A | 335 | 100% |  |  |  | 이창호 | 4h | 4h | 계획대로 |  |
| 338 | 4.4.7.5.5 | **장비설정** |  | 0.5d | 2014-01-22 A | 2014-01-22 A |  | 100% |  |  |  |  | 4h | 4h | 계획대로 |  |
| 339 | 4.4.7.5.5.1 | 장비설정 |  | 0.5d | 2014-01-22 A | 2014-01-22 A | 337 | 100% |  |  |  | 이창호 | 4h | 4h | 계획대로 |  |
| 340 | 4.4.7.6 | 공통기능개발완료(김정민) | milestone | 0d | 2014-01-24 A | 2014-01-24 A | 327 | 100% |  |  |  | 김정민 |  |  | 계획대로 |  |
| 341 | 4.4.7.7 | 공통기능개발완료(이창호) | milestone | 0d | 2014-01-22 A | 2014-01-22 A | 339 | 100% |  |  |  | 이창호 |  |  | 계획대로 |  |
| 342 | 4.4.7.8 | 공통 개발 완료 | milestone | 0d | 2014-01-24 A | 2014-01-24 A | 340, 341 | 100% |  |  |  | 김정민; 이창호 |  |  | 계획대로 |  |
| 343 | 4.4.8 | **포장 보조 PDA S/W** |  | 5d | 2014-01-24 A | 2014-02-03 A |  | 100% |  |  |  | 김정민 | 80h | 80h | 계획대로 |  |
| 344 | 4.4.8.1 | **개별개발기능** |  | 3d | 2014-01-24 A | 2014-01-29 A |  | 100% |  |  |  |  | 24h | 24h | 계획대로 |  |
| 345 | 4.4.8.1.1 | **포장 보조** |  | 3d | 2014-01-24 A | 2014-01-29 A |  | 100% |  |  |  |  | 24h | 24h | 계획대로 |  |
| 346 | 4.4.8.1.1.1 | 포장 지시 조회 |  | 1d | 2014-01-24 A | 2014-01-27 A | 340 | 100% |  |  |  | 김정민 | 8h | 8h | 계획대로 |  |
| 347 | 4.4.8.1.1.2 | RFID TAG로 포장 지시 조회 |  | 0.5d | 2014-01-27 A | 2014-01-27 A | 346 | 100% |  |  |  | 김정민 | 4h | 4h | 계획대로 |  |
| 348 | 4.4.8.1.1.3 | 포장 지시 내역 상세 조회 |  | 0.5d | 2014-01-27 A | 2014-01-28 A | 347 | 100% |  |  |  | 김정민 | 4h | 4h | 계획대로 |  |
| 349 | 4.4.8.1.1.4 | 재포장 리스트 매칭 (지시 <-> RFID 스캔 내역) |  | 0.5d | 2014-01-28 A | 2014-01-28 A | 348 | 100% |  |  |  | 김정민 | 4h | 4h | 계획대로 |  |
| 350 | 4.4.8.1.1.5 | 재포장 작업 확인 |  | 0.5d | 2014-01-28 A | 2014-01-29 A | 349 | 100% |  |  |  | 김정민 | 4h | 4h | 계획대로 |  |
| 351 | 4.4.8.2 | 통합 테스트 |  | 2d | 2014-01-29 A | 2014-02-03 A | 350 | 100% |  |  |  | 김정민 | 16h | 16h | 계획대로 | 100 |
| 352 | 4.4.8.3 | 포장 보조 PDA S/W 개발 완료 | milestone | 0d | 2014-02-03 A | 2014-02-03 A | 351 | 100% |  |  |  | 김정민 |  |  | 계획대로 | 100 |

Notes:
- 333: pc와 동일한 스키마 가져가기 / 2월20일 배포한 KEIDAS 드라이버 적용 하기 / 새로 요청하신 취소 기능 미미

| ID | WBS | Task | Type | Duration | Start | Finish | Predecessors | Complete | Remaining | Total slack | Free slack | Resources | Work | Actual work | 완료 분석 | Text1 | 차주계획율 |
| --- | --- | --- | --- | --- | --- | --- | --- | --- | --- | --- | --- | --- | --- | --- | --- | --- | --- |
| 353 | 4.4.9 | **검체 PDA S/W** |  | 6d | 2014-01-22 A | 2014-01-30 |  | 97% | 0.2d | 0d |  | 이창호 | 96h | 92.8h | 예정 |  |  |
| 354 | 4.4.9.1 | **개별개발기능** |  | 4d | 2014-01-22 A | 2014-01-28 A |  | 100% |  |  |  |  | 32h | 32h | 계획대로 |  |  |
| 355 | 4.4.9.1.1 | **검체** |  | 4d | 2014-01-22 A | 2014-01-28 A |  | 100% |  |  |  |  | 32h | 32h | 계획대로 |  |  |
| 356 | 4.4.9.1.1.1 | 포장지시정보로 조회 |  | 1d | 2014-01-22 A | 2014-01-23 A | 341 | 100% |  |  |  | 이창호 | 8h | 8h | 계획대로 |  |  |
| 357 | 4.4.9.1.1.2 | RFID TAG로 포장지시정보 조회 |  | 1d | 2014-01-23 A | 2014-01-24 A | 356 | 100% |  |  |  | 이창호 | 8h | 8h | 계획대로 |  |  |
| 358 | 4.4.9.1.1.3 | 검체 리스트 매칭 (지시 <-> RFID 스캔 내역) |  | 1d | 2014-01-24 A | 2014-01-27 A | 357 | 100% |  |  |  | 이창호 | 8h | 8h | 계획대로 |  |  |
| 359 | 4.4.9.1.1.4 | 검체 구분 후 검체 등록 |  | 1d | 2014-01-27 A | 2014-01-28 A | 358 | 100% |  |  |  | 이창호 | 8h | 8h | 계획대로 |  |  |
| 360 | 4.4.9.2 | 통합 테스트 |  | 2d | 2014-01-28 A | 2014-01-30 | 359 | 90% | 0.2d | -512.9d | 0d | 이창호 | 16h | 14.4h | 예정 |  |  |
| 361 | 4.4.9.3 | 검체 PDA S/W 완료 | milestone | 0d | 2014-01-30 | 2014-01-30 | 360 |  |  | -512.9d | 0d | 이창호 |  |  | 예정 |  |  |
| 362 | 4.4.10 | **발송보조 PDA S/W** |  | 18.52d | 2014-01-30 A | 2014-02-27 |  | 86% | 2.69d | 0d |  | 한원석 | 188.2h | 38.2h | 예정 |  |  |
| 363 | 4.4.10.1 | **개별개발기능** |  | 17.12d | 2014-01-30 A | 2014-02-26 |  | 89% | 1.86d | 0d |  |  | 24h | 21.4h | 예정 |  |  |
| 364 | 4.4.10.1.1 | **발송 보조** |  | 17.12d | 2014-01-30 A | 2014-02-26 |  | 89% | 1.86d | 0d |  |  | 24h | 21.4h | 예정 |  |  |
| 365 | 4.4.10.1.1.1 | 발송 지시 조회 |  | 0.5d | 2014-01-30 A | 2014-02-24 | 361FS+16d | 95% | 0.03d | -528.92d | 0d | 한원석 | 4h | 3.8h | 예정 |  |  |
| 366 | 4.4.10.1.1.2 | RFID TAG로 발송 지시 조회 |  | 0.5d | 2014-02-03 A | 2014-02-25 A | 365 | 100% |  |  |  | 한원석 | 4h | 4h | 계획대로 |  |  |
| 367 | 4.4.10.1.1.3 | 발송 지시 내역 상세 조회 |  | 1d | 2014-02-03 A | 2014-02-25 | 366 | 70% | 0.3d | -529.42d | 0d | 한원석 | 8h | 5.6h | 예정 | 80 | 100 |
| 368 | 4.4.10.1.1.4 | 발송 취소 리스트 매칭 (RFID 스캔 이나 선택) |  | 0.5d | 2014-02-04 A | 2014-02-25 A | 367 | 100% |  |  |  | 한원석 | 4h | 4h | 계획대로 | 80 | 100 |
| 369 | 4.4.10.1.1.5 | 발송 취소 확정 |  | 0.5d | 2014-02-05 A | 2014-02-26 A | 368 | 100% |  |  |  | 한원석 | 4h | 4h | 계획대로 | 80 | 100 |
| 370 | 4.4.10.2 | 통합 테스트 |  | 2d | 2014-02-05 A | 2014-02-27 | 369 | 80% | 0.4d | -551.42d | 0d | 한원석 | 16h | 12.8h | 예정 | 50 | 100 |
| 371 | 4.4.10.3 | 발송보조 PDA 개발완료 | milestone | 0d | 2014-02-27 | 2014-02-27 | 370 |  |  | -551.42d | 0d | 한원석 |  |  | 예정 |  |  |
| 372 | 4.4.11 | **반품 PDA S/W** |  | 9d | 2014-02-03 A | 2014-02-14 |  | 72% | 2.55d | -1d | 0d | 김정민 | 144h | 103.2h | 예정 |  |  |
| 373 | 4.4.11.1 | **개별개발기능** |  | 6d | 2014-02-03 A | 2014-02-11 |  | 91% | 0.55d | 0d |  |  | 48h | 43.6h | 예정 |  |  |
| 374 | 4.4.11.1.1 | **반품/취소** |  | 6d | 2014-02-03 A | 2014-02-11 |  | 91% | 0.55d | 0d |  |  | 48h | 43.6h | 예정 |  |  |
| 375 | 4.4.11.1.1.1 | 반품 지시 조회 |  | 0.5d | 2014-02-03 A | 2014-02-03 A | 352 | 100% |  |  |  | 김정민 | 4h | 4h | 계획대로 |  |  |
| 376 | 4.4.11.1.1.2 | RFID TAG로 반품 지시 조회 |  | 0.5d | 2014-02-03 A | 2014-02-04 A | 375 | 100% |  |  |  | 김정민 | 4h | 4h | 계획대로 |  |  |
| 377 | 4.4.11.1.1.3 | 지시 내역 상세 조회 |  | 0.5d | 2014-02-04 A | 2014-02-04 A | 376 | 100% |  |  |  | 김정민 | 4h | 4h | 계획대로 |  |  |
| 378 | 4.4.11.1.1.4 | 반품 리스트 매칭 (지시 <-> RFID 스캔 내역) |  | 1d | 2014-02-04 A | 2014-02-05 A | 377 | 100% |  |  |  | 김정민 | 8h | 8h | 계획대로 |  |  |
| 379 | 4.4.11.1.1.5 | 반품 내역 RFID 리스트 |  | 1d | 2014-02-05 A | 2014-02-06 A | 378 | 100% |  |  |  | 김정민 | 8h | 8h | 계획대로 |  |  |
| 380 | 4.4.11.1.1.6 | 수량 보정 |  | 1d | 2014-02-06 A | 2014-02-07 A | 379 | 100% |  |  |  | 김정민 | 8h | 8h | 계획대로 | 20 |  |
| 381 | 4.4.11.1.1.7 | 반품 확정 |  | 0.5d | 2014-02-07 A | 2014-02-10 | 380 | 90% | 0.05d | -518.4d | 0d | 김정민 | 4h | 3.6h | 예정 | 50 | 100 |
| 382 | 4.4.11.1.1.8 | 반품 거부 |  | 1d | 2014-02-10 A | 2014-02-11 | 381 | 50% | 0.5d | -519.4d | 0d | 김정민 | 8h | 4h | 예정 | 20 | 100 |
| 383 | 4.4.11.2 | 통합 테스트 |  | 2d | 2014-02-11 A | 2014-02-13 | 382 | 50% | 1d | -549.4d | 0d | 김정민 | 16h | 8h | 예정 | 20 | 100 |
| 384 | 4.4.11.3 | 반품 PDA 개발완료 |  | 1d | 2014-02-13 | 2014-02-14 | 383 |  |  | -549.4d | 0d | 김정민 | 8h |  | 예정 |  |  |

Notes:
- 360: jaekwon : 통합테스트 미진 사유는?
- 364: jaekwon : 발송보조 진행 되었는지?
- 372: jaekwon : 딜레이 사유는 머가 있는건지?
- 381: 보정수량 부분 새로운 API 적용 대기 2/27 API 배포

| ID | WBS | Task | Type | Duration | Start | Finish | Predecessors | Complete | Remaining | Total slack | Free slack | Constraint | Resources | Work | Actual work | 완료 분석 |
| --- | --- | --- | --- | --- | --- | --- | --- | --- | --- | --- | --- | --- | --- | --- | --- | --- |
| 385 | 4.4.12 | **폐기 PDA S/W** |  | 15.6d | 2014-02-14 A | 2014-03-07 |  | 33% | 10.4d | 0d |  |  | 김정민 | 252.8h | 99.2h | 예정 |
| 386 | 4.4.12.1 | **개별개발기능** |  | 5d | 2014-02-14 | 2014-02-21 |  |  |  | -549.4d | 0d |  |  | 40h |  | 예정 |
| 387 | 4.4.12.1.1 | **폐기/취소** |  | 5d | 2014-02-14 | 2014-02-21 |  |  |  | -549.4d | 0d |  |  | 40h |  | 예정 |
| 388 | 4.4.12.1.1.1 | 폐기 지시 조회 |  | 0.5d | 2014-02-14 | 2014-02-14 | 384 |  |  | -549.4d | 0d |  | 김정민 | 4h |  | 예정 |
| 389 | 4.4.12.1.1.2 | RFID TAG로 폐기 지시 조회 |  | 0.5d | 2014-02-14 | 2014-02-17 | 388 |  |  | -549.4d | 0d |  | 김정민 | 4h |  | 예정 |
| 390 | 4.4.12.1.1.3 | 지시 내역 상세 조회 |  | 0.5d | 2014-02-17 | 2014-02-17 | 389 |  |  | -549.4d | 0d |  | 김정민 | 4h |  | 예정 |
| 391 | 4.4.12.1.1.4 | 폐기 리스트 매칭 (지시 <-> RFID 스캔 내역) |  | 1d | 2014-02-17 | 2014-02-18 | 390 |  |  | -549.4d | 0d |  | 김정민 | 8h |  | 예정 |
| 392 | 4.4.12.1.1.5 | 폐기 내역 RFID 리스트 |  | 1d | 2014-02-18 | 2014-02-19 | 391 |  |  | -549.4d | 0d |  | 김정민 | 8h |  | 예정 |
| 393 | 4.4.12.1.1.6 | 수량 보정 |  | 1d | 2014-02-19 | 2014-02-20 | 392 |  |  | -549.4d | 0d |  | 김정민 | 8h |  | 예정 |
| 394 | 4.4.12.1.1.7 | 폐기 확정 |  | 0.5d | 2014-02-20 | 2014-02-21 | 393 |  |  | -549.4d | 0d |  | 김정민 | 4h |  | 예정 |
| 395 | 4.4.12.2 | 통합 테스트 |  | 2d | 2014-02-21 | 2014-02-25 | 394 |  |  | -549.4d | 0d |  | 김정민 | 16h |  | 예정 |
| 396 | 4.4.12.3 | 폐기 PDA 개발완료 | milestone | 0d | 2014-02-25 | 2014-02-25 | 395 |  |  | -529.4d | 0d |  | 김정민 |  |  | 예정 |
| 397 | 4.4.12.4 | **재입고 PDA S/W** |  | 4d | 2014-03-04 A | 2014-03-07 |  | 80% | 0.8d | 0d |  |  | 최명호 | 72h | 57.6h | 예정 |
| 398 | 4.4.12.4.1 | **개별개발기능** |  | 3d | 2014-03-04 A | 2014-03-06 A |  | 100% |  |  |  |  |  | 24h | 24h | 계획대로 |
| 399 | 4.4.12.4.1.1 | **재입고** |  | 3d | 2014-03-04 A | 2014-03-06 A |  | 100% |  |  |  |  |  | 24h | 24h | 계획대로 |
| 400 | 4.4.12.4.1.1.1 | RFID TAG로 반품 지시 조회 |  | 1d | 2014-03-04 A | 2014-03-04 A |  | 100% |  |  |  | start no earlier than 2014-03-04 | 최명호 | 8h | 8h | 계획대로 |
| 401 | 4.4.12.4.1.1.2 | TAG 상세 조회 |  | 1d | 2014-03-05 A | 2014-03-05 A |  | 100% |  |  |  | start no earlier than 2014-03-05 | 최명호 | 8h | 8h | 계획대로 |
| 402 | 4.4.12.4.1.1.3 | 재입고 확정 |  | 1d | 2014-03-06 A | 2014-03-06 A | 401 | 100% |  |  |  |  | 최명호 | 8h | 8h | 계획대로 |
| 403 | 4.4.12.4.2 | 통합 테스트 |  | 1d | 2014-03-07 A | 2014-03-07 A |  | 100% |  |  |  | start no earlier than 2014-03-07 | 최명호 | 8h | 8h | 계획대로 |
| 404 | 4.4.12.4.3 | 재입고 PDA 개발완료 |  | 1d | 2014-03-07 | 2014-03-07 |  |  |  | -538d | 0d | start no earlier than 2014-03-07 | 최명호 | 8h |  | 예정 |
| 405 | 4.4.13 | PDA 개발 완료 | milestone | 0d | 2014-02-27 | 2014-02-27 | 352, 371, 395 |  |  | -551.42d | 0d |  | 김정민; 이창호 |  |  | 예정 |
| 406 | 4.4.14 | **배포 업데이터 서버** |  | 10d | 2014-03-03 A | 2014-03-14 |  | 17% | 8.33d | -9d | 0d |  |  | 24h | 4h | 예정 |
| 407 | 4.4.14.1 | 테스트 서버 세팅(우분투, 제우스 6.0) |  | 1d | 2014-03-03 A | 2014-03-03 |  | 50% | 0.5d | -535d | 0d | start no earlier than 2014-03-03 | 최명호 | 8h | 4h | 예정 |
| 408 | 4.4.14.2 | 배포 테스트(PC, PDA) |  | 1d | 2014-03-04 | 2014-03-04 | 407 |  |  | -535d | 0d |  | 최명호 | 8h |  | 예정 |
| 409 | 4.4.14.3 | 실 서버에서 테스트 |  | 1d | 2014-03-14 | 2014-03-14 |  |  |  | -543d | 0d | start no earlier than 2014-03-14 | 최명호 | 8h |  | 예정 |

Notes:
- 388: 폐기 지시 프로세스 삭제
- 389: 폐기 지시 프로세스 삭제
- 390: 폐기 지시 프로세스 삭제
- 391: 폐기 지시 프로세스 삭제
- 392: 폐기 보정 수량 부분 새로운 API 적용 대기
- 393: 폐기 보정 수량 부분 새로운 API 적용 대기
- 394: 폐기 보정 수량 부분 새로운 API 적용 대기
- 395: 폐기 보정 수량 부분 새로운 API 적용 대기
- 396: 폐기 보정 수량 부분 새로운 API 적용 대기
- 407: 우분투(Liux) 서버 설치하고 제우스 설치시 JDK 1.5버전이 설치가 되지 않아 제우스를 설치 하지 못 함
- 409: 실 서버(클라우드) 세팅이 언제 되는지 모름

| ID | WBS | Task | Type | Duration | Start | Finish | Predecessors | Total slack | Free slack | Resources | Work | 완료 분석 |
| --- | --- | --- | --- | --- | --- | --- | --- | --- | --- | --- | --- | --- |
| 410 | 4.4.15 | **웹 이력관리 S/W** |  | 15d | 2014-03-05 | 2014-03-26 |  | -550.62d | 0d |  | 120h | 예정 |
| 411 | 4.4.15.1 | 제조사 특화 기능 구현 |  | 5d | 2014-03-05 | 2014-03-12 | 419FF-5d | -550.62d | 0d | SI_WEB_중 | 40h | 예정 |
| 412 | 4.4.15.2 | 포장, 발송 실적 테스트 |  | 5d | 2014-03-12 | 2014-03-19 | 411 | -550.62d | 0d | SI_WEB_중 | 40h | 예정 |
| 413 | 4.4.15.3 | 반품, 폐기 실적 테스트 |  | 5d | 2014-03-19 | 2014-03-26 | 412 | -550.62d | 0d | SI_WEB_중 | 40h | 예정 |
| 414 | 4.4.15.4 | 웹 이력관리 S/W 개발 완료 | milestone | 0d | 2014-03-26 | 2014-03-26 | 413 | -550.62d | 0d |  |  | 예정 |
| 415 | 4.4.16 | **디자인** |  | 10d | 2014-03-05 | 2014-03-19 |  | -545.62d | 0d |  | 160h | 예정 |
| 416 | 4.4.16.1 | EDGE 디자인 |  | 10d | 2014-03-05 | 2014-03-19 | 419FF | -545.62d | 0d | 디자인_고 | 80h | 예정 |
| 417 | 4.4.16.2 | PDA 디자인 |  | 10d | 2014-03-05 | 2014-03-19 | 419FF | -545.62d | 0d | 디자인_고 | 80h | 예정 |
| 418 | 4.4.16.3 | 디자인 완료 | milestone | 0d | 2014-03-19 | 2014-03-19 | 417 | -545.62d | 0d |  |  | 예정 |
| 419 | 4.4.17 | 개발 완료 | milestone | 0d | 2014-03-19 | 2014-03-19 | 311, 405 | -565.62d | 0d |  |  | 예정 |
| 420 | 4.5 | **연동** |  | 10d | 2014-03-19 | 2014-04-02 |  | -565.62d | 0d |  |  | 예정 |
| 421 | 4.5.1 | **연동 테스트 시나리오 작성** |  | 2d | 2014-03-19 | 2014-03-21 |  | -565.62d | 0d |  |  | 예정 |
| 422 | 4.5.1.1 | 시나리오 작성 |  | 2d | 2014-03-19 | 2014-03-21 | 419 | -565.62d | 0d |  |  | 예정 |
| 423 | 4.5.2 | **테스트** |  | 8d | 2014-03-21 | 2014-04-02 |  | -565.62d | 0d |  |  | 예정 |
| 424 | 4.5.2.1 | 포장라인 테스트 |  | 4d | 2014-03-21 | 2014-03-27 | 422 | -565.62d | 0d |  |  | 예정 |
| 425 | 4.5.2.2 | 발송라인 테스트 |  | 4d | 2014-03-27 | 2014-04-02 | 424 | -565.62d | 0d |  |  | 예정 |
| 426 | 4.5.2.3 | 테스트 완료 | milestone | 0d | 2014-04-02 | 2014-04-02 | 425 | -565.62d | 0d |  |  | 예정 |
| 427 | 4.6 | **산출물** |  | 10d | 2014-04-02 | 2014-04-16 |  | -565.62d | 0d |  |  | 예정 |
| 428 | 4.6.1 | 완료산출물 |  | 10d | 2014-04-02 | 2014-04-16 | 426 | -565.62d | 0d |  |  | 예정 |
| 429 | 5 | **통합 테스트** |  | 5d | 2014-04-02 | 2014-04-09 |  | 66.38d |  |  |  | 예정 |
| 430 | 5.1 | 포장 S/W, H/W 연동 테스트 |  | 5d | 2014-04-02 | 2014-04-09 | 426 | 66.38d | 0d |  |  | 예정 |
| 431 | 5.2 | 발송 S/W, H/W 연동 테스트 |  | 5d | 2014-04-02 | 2014-04-09 | 426 | 66.38d | 0d |  |  | 예정 |
| 432 | 5.3 | 연동 테스트 완료 | milestone | 0d | 2014-04-09 | 2014-04-09 | 430, 431 | 66.38d | 0d |  |  | 예정 |
| 433 | 6 | 프로젝트 완료 | milestone | 0d | 2014-04-09 | 2014-04-09 | 432 | 66.38d |  |  |  | 예정 |
